# Commercial Office Space Construction

Schedule from MS Project, 2017-08-20 to 2021-02-16, costs in $.

## Calendars

- Construction Calendar: Mon-Fri 08:30-12:30, 13:30-17:30; Sat-Sun off. Exceptions (off unless hours are given): 2020-08-15 (INDEPENDENCE DAY), 2020-10-02 (GANDHI JAYANTI), 2020-12-25 (CHRISTMAS).

## Resources

| Resource | Unit | Rate | Cost per use |
| --- | --- | --- | --- |
| General Manager |  |  |  |
| Steel | ton | 600 | 50 |
| Flight Fare |  |  |  |
| Steel Erection Contractor Management |  |  |  |
| Site Grading Contractor |  | 12 |  |
| Steel Erection Contractor |  |  |  |
| Project Management |  | 90 |  |
| Procurement |  | 35 |  |
| Scheduler |  |  |  |
| Accounting |  |  |  |
| Superintendent |  |  |  |
| Survey Unit |  |  |  |
| Rough Carpenter Unit |  |  |  |
| Labor Unit |  |  |  |
| Concrete Unit |  |  |  |
| Finish Carpenter Unit |  |  |  |
| Plumbing Contractor |  |  |  |
| Plumbing Contractor Management |  |  |  |
| Electric Contractor |  |  |  |
| Electric Contractor Management |  |  |  |
| HVAC Contractor |  |  |  |
| HVAC Contractor Management |  |  |  |
| Elevator Contractor |  |  |  |
| Elevator Contractor Management |  |  |  |
| Drywall Contractor |  |  |  |
| Masonry Contractor |  |  |  |
| Tile Contractor |  |  |  |
| Roofing Contractor |  |  |  |
| Roofing Contractor Management |  |  |  |
| Window Contractor |  |  |  |
| Carpet Contractor |  |  |  |
| Landscape Contractor |  |  |  |
| Paving Contractor |  |  |  |
| Painting Contractor |  |  |  |

## Schedule

| ID | WBS | Task | Type | Duration | Start | Finish | Predecessors | Total slack | Free slack | Constraint | Deadline | Resources | Work | Cost |
| --- | --- | --- | --- | --- | --- | --- | --- | --- | --- | --- | --- | --- | --- | --- |
| 1 | 1 | **General Conditions** |  | 24d | 2019-10-21 | 2019-11-21 |  | -0.06d | 0d |  |  |  | 80h | 5,300 |
| 2 | 1.1 | Receiving notice to proceed and sign contract |  | 3d | 2019-10-21 | 2019-10-23 |  | -0.06d | 0d | start no earlier than 2019-10-21 |  |  |  |  |
| 3 | 1.2 | Submitting bond and insurance documents |  | 2d | 2019-10-24 | 2019-10-25 | 2 | -0.06d | 0d |  |  |  |  |  |
| 4 | 1.3 | Preparing and submitting project schedule |  | 2d | 2019-10-28 | 2019-10-29 | 3 | -0.06d | 0d |  |  |  |  |  |
| 5 | 1.4 | Preparing and submitting schedule of values |  | 2d | 2019-10-30 | 2019-10-31 | 4 | -0.06d | 0d |  |  |  |  |  |
| 6 | 1.5 | Obtaining building permits |  | 4d | 2019-11-05 | 2019-11-08 | 5FS+2d | -0.06d | 0d |  | 2019-11-08 |  |  |  |
| 7 | 1.6 | Building permits obtained | milestone | 0d | 2019-11-08 | 2019-11-08 | 6 | 329d |  |  |  |  |  |  |
| 8 | 1.7 | Submitting preliminary shop drawings |  | 2w | 2019-11-08 | 2019-11-21 | 6FS-1d | 92d | 0d |  |  | Project Management [50%]; Procurement [50%]; Flight Fare [0.1%] | 80h | 5,300 |
| 9 | 1.8 | Submitting monthly requests for payment |  | 1d | 2019-10-24 | 2019-10-24 | 2 | 7d | 0d |  |  |  |  |  |
| 10 | 2 | **Long Lead Procurement** |  | 70d | 2019-10-25 | 2020-01-30 |  | 7d |  |  |  |  | 80h |  |
| 11 | 2.1 | Submitting shop drawings and order long lead items - steel |  | 2w | 2019-10-25 | 2019-11-07 | 9 | 7d | 0d |  |  | Steel Erection Contractor Management | 80h |  |
| 12 | 2.2 | Submitting shop drawings and order long lead items - roofing |  | 2w | 2019-11-22 | 2019-12-05 | 8 | 261d | 184d |  |  |  |  |  |
| 13 | 2.3 | Submitting shop drawings and order long lead items - elevator |  | 2w | 2019-11-22 | 2019-12-05 | 8 | 251d | 97d |  |  |  |  |  |
| 14 | 2.4 | Submitting shop drawings and order long lead items - plumbing |  | 2w | 2019-11-22 | 2019-12-05 | 8 | 92d |  |  |  |  |  |  |
| 15 | 2.5 | Submitting shop drawings and order long lead items - electric |  | 2w | 2019-11-22 | 2019-12-05 | 8 | 92d |  |  |  |  |  |  |
| 16 | 2.6 | Submitting shop drawings and order long lead items - HVAC |  | 2w | 2019-11-22 | 2019-12-05 | 8 | 92d |  |  |  |  |  |  |
| 17 | 2.7 | Detail, fabricate and deliver steel |  | 12w | 2019-11-08 | 2020-01-30 | 11 | 7d | 0d |  |  |  |  |  |
| 18 | 2.8 | Procurement completed | milestone | 0d | 2020-01-30 | 2020-01-30 | 17 | 270d |  |  |  |  |  |  |
| 19 | 3 | **Mobilize on Site** |  | 11d? | 2019-10-24 | 2019-11-07 |  | 0d |  |  |  |  |  |  |
| 20 | 3.1 | Install temporary power |  | 2d | 2019-10-24 | 2019-10-25 | 2 | 0d |  |  |  |  |  |  |
| 21 | 3.2 | Install temporary water service |  | 2d | 2019-10-24 | 2019-10-25 | 2 | 0d |  |  |  |  |  |  |
| 22 | 3.3 | Set up site office |  | 3d | 2019-10-28 | 2019-10-30 | 20, 21 | 0d |  |  |  |  |  |  |
| 23 | 3.4 | Set line and grade benchmarks |  | 3d | 2019-10-31 | 2019-11-04 | 22 | 0d |  |  |  |  |  |  |
| 24 | 3.5 | Prepare site - lay down yard and temporary fencing |  | 2d | 2019-11-05 | 2019-11-06 | 23 | 0d |  |  |  |  |  |  |
| 25 | 3.6 | Mobilization completed | milestone | 1d? | 2019-11-07 | 2019-11-07 | 24 | 330d |  |  |  |  |  |  |

| ID | WBS | Task | Duration | Start | Finish | Predecessors | Total slack | Free slack | Resources | Work | Cost |
| --- | --- | --- | --- | --- | --- | --- | --- | --- | --- | --- | --- |
| 26 | 4 | **Site Grading and Utilities** | 35d | 2019-11-07 | 2019-12-25 |  | 0d |  |  |  |  |
| 27 | 4.1 | Clear and grub site | 3d | 2019-11-07 | 2019-11-11 | 22, 24 | 0d |  |  |  |  |
| 28 | 4.2 | Stone site access and temporary parking area | 2d | 2019-11-12 | 2019-11-13 | 27, 24 | 0d |  |  |  |  |
| 29 | 4.3 | Rough grade site (cut and fill) | 1w | 2019-11-14 | 2019-11-20 | 28 | 0d |  |  |  |  |
| 30 | 4.4 | Install storm drainage | 2w | 2019-11-21 | 2019-12-04 | 29 | 9d |  |  |  |  |
| 31 | 4.5 | Install exterior fire line and building fire riser | 2w | 2019-11-21 | 2019-12-04 | 29 | 0d |  |  |  |  |
| 32 | 4.6 | Perform final site grading | 2w | 2019-12-05 | 2019-12-18 | 30FF+1d, 31 | 0d |  |  |  |  |
| 33 | 4.7 | Erect building batter boards and layout building | 1w | 2019-12-19 | 2019-12-25 | 32 | 0d |  |  |  |  |
| 34 | 5 | **Excavation and Foundations** | 33d | 2019-12-26 | 2020-02-10 |  | 0d |  |  | 120h | 3,722 |
| 35 | 5.1 | Excavate foundations | 2w | 2019-12-26 | 2020-01-08 | 33 | 0d |  | Site Grading Contractor [50%]; Steel [5 ton] | 40h | 3,530 |
| 36 | 5.2 | Excavate elevator pit | 2d | 2019-12-26 | 2019-12-27 | 33 | 214d | 0d | Site Grading Contractor | 16h | 192 |
| 37 | 5.3 | Form column piers and spread foundations | 4d | 2020-01-09 | 2020-01-14 | 35 | 0d |  |  |  |  |
| 38 | 5.4 | Rough-in electric and plumbing in elevator | 4d | 2019-12-30 | 2020-01-02 | 36 | 214d | 0d | Plumbing Contractor; Electric Contractor | 64h |  |
| 39 | 5.5 | Form elevator pit walls | 4d | 2020-01-03 | 2020-01-08 | 38 | 214d | 0d |  |  |  |
| 40 | 5.6 | Set reinforcing and anchor bolts | 4d | 2020-01-15 | 2020-01-20 | 37 | 0d |  |  |  |  |
| 41 | 5.7 | Pour column piers and foundations | 5d | 2020-01-21 | 2020-01-27 | 40 | 0d |  |  |  |  |
| 42 | 5.8 | Pour concrete elevator walls | 1d | 2020-01-09 | 2020-01-09 | 39 | 214d | 0d |  |  |  |
| 43 | 5.9 | Cure elevator wall concrete | 7d | 2020-01-10 | 2020-01-20 | 42 | 214d | 0d |  |  |  |
| 44 | 5.10 | Cure piers and foundations | 7d | 2020-01-28 | 2020-02-05 | 41 | 0d |  |  |  |  |
| 45 | 5.11 | Strip wall forms | 1d | 2020-01-21 | 2020-01-21 | 43 | 214d | 0d |  |  |  |
| 46 | 5.12 | Strip column piers and foundation forms | 3d | 2020-02-06 | 2020-02-10 | 44 | 0d |  |  |  |  |
| 47 | 5.13 | Install pneumatic tube in elevator pit | 3d | 2020-01-22 | 2020-01-24 | 45 | 214d | 0d |  |  |  |
| 48 | 5.14 | Prepare and pour concrete floor in elevator pit | 1d | 2020-01-27 | 2020-01-27 | 47 | 214d | 60d |  |  |  |
| 49 | 6 | **Column Erection and Miscellaneous steel works** | 45d | 2020-02-11 | 2020-04-13 |  | 0d |  |  |  |  |
| 50 | 6.1 | Erect steel columns, beams and joint - 1st and 2nd floors | 2w | 2020-02-11 | 2020-02-24 | 46, 17 | 0d |  |  |  |  |
| 51 | 6.2 | Erect steel columns, beams and joint - 3rd floor and roof | 2w | 2020-02-25 | 2020-03-09 | 50 | 0d |  |  |  |  |
| 52 | 6.3 | Install miscellaneous iron and bracing - 1st and 2nd floors | 2w | 2020-02-25 | 2020-03-09 | 50 | 164d | 10d |  |  |  |
| 53 | 6.4 | Install miscellaneous iron and bracing - 3rd floor and roof | 2w | 2020-03-10 | 2020-03-23 | 51 | 0d |  |  |  |  |
| 54 | 6.5 | Install stairs and miscellaneous iron railing | 2w | 2020-03-24 | 2020-04-06 | 53 | 0d |  |  |  |  |
| 55 | 6.6 | Touch-up paint on steel | 1w | 2020-04-07 | 2020-04-13 | 54 | 0d |  |  |  |  |

| ID | WBS | Task | Duration | Start | Finish | Predecessors | Total slack | Free slack | Resources | Work |
| --- | --- | --- | --- | --- | --- | --- | --- | --- | --- | --- |
| 56 | 7 | **Forming, Pouring, & Curing - Floors and Roof** | 85d | 2020-02-25 | 2020-06-22 |  | 35d |  |  | 33.6h |
| 57 | 7.1 | Form 2nd floor including all floor openings | 5d | 2020-04-14 | 2020-04-20 | 55, 14, 15, 16, 50 | 0d |  |  |  |
| 58 | 7.2 | Install rebar and in-floor utilities (including mechanical, electrical, plumbing) | 5d | 2020-02-25 | 2020-03-02 | 50 | 35d |  |  |  |
| 59 | 7.3 | Pour 2nd floor slab | 4d | 2020-04-21 | 2020-04-24 | 58, 57 | 0d |  |  |  |
| 60 | 7.4 | Cure 2nd floor slab | 7d | 2020-04-27 | 2020-05-05 | 59 | 0d |  | Labor Unit [10%] | 5.6h |
| 61 | 7.5 | Strip forms from 2nd floor slab | 2d | 2020-05-06 | 2020-05-07 | 60 | 99d | 0d |  |  |
| 62 | 7.6 | Form 3rd floor including all floor openings | 5d | 2020-05-06 | 2020-05-12 | 60 | 0d |  | Rough Carpenter Unit [50%]; Labor Unit [20%] | 28h |
| 63 | 7.7 | Install rebar and in-floor utilities (including mechanical, electrical, plumbing) | 5d | 2020-05-06 | 2020-05-12 | 60 | 0d |  |  |  |
| 64 | 7.8 | Pour 3rd floor slab | 4d | 2020-05-13 | 2020-05-18 | 63, 62 | 0d |  |  |  |
| 65 | 7.9 | Cure 3rd floor slab | 7d | 2020-05-19 | 2020-05-27 | 64 | 0d |  |  |  |
| 66 | 7.10 | Strip forms from 3rd floor slab | 2d | 2020-05-28 | 2020-05-29 | 65 | 16d |  |  |  |
| 67 | 7.11 | Form roof slab including all floor openings | 5d | 2020-05-28 | 2020-06-03 | 65 | 0d |  |  |  |
| 68 | 7.12 | Install rebar and in-floor utilities (including mechanical, electrical, plumbing) | 5d | 2020-05-28 | 2020-06-03 | 65 | 0d |  |  |  |
| 69 | 7.13 | Pour roof slab | 4d | 2020-06-04 | 2020-06-09 | 68, 67 | 0d |  |  |  |
| 70 | 7.14 | Cure roof slab | 7d | 2020-06-10 | 2020-06-18 | 69 | 0d |  |  |  |
| 71 | 7.15 | Strip forms from roof slab | 2d | 2020-06-19 | 2020-06-22 | 70 | 0d |  |  |  |
| 72 | 7.16 | Form 1st floor | 4d | 2020-05-08 | 2020-05-13 | 61 | 100d | 1d |  |  |
| 73 | 7.17 | Install electrical underground | 1w | 2020-05-08 | 2020-05-14 | 61 | 99d | 0d |  |  |
| 74 | 7.18 | Install plumbing underground | 1w | 2020-05-08 | 2020-05-14 | 61 | 99d | 0d |  |  |
| 75 | 7.19 | Install rebar and in-floor utilities | 4d | 2020-05-08 | 2020-05-13 | 61 | 100d | 1d |  |  |
| 76 | 7.20 | Pour 1st floor slab | 4d | 2020-05-15 | 2020-05-20 | 72, 75, 73, 74 | 99d | 0d |  |  |
| 77 | 7.21 | Cure 1st floor slab | 7d | 2020-05-21 | 2020-05-29 | 76 | 99d | 0d |  |  |
| 78 | 7.22 | Strip forms from 1st floor slab | 2d | 2020-06-01 | 2020-06-02 | 77 | 99d | 0d |  |  |
| 79 | 8 | **Carpentry Work** | 15d | 2020-06-23 | 2020-07-13 |  | 0d |  |  |  |
| 80 | 8.1 | Install exterior sheathing and metal studs | 3w | 2020-06-23 | 2020-07-13 | 66, 71 | 0d |  |  |  |

| ID | WBS | Task | Type | Duration | Start | Finish | Predecessors | Total slack | Free slack |
| --- | --- | --- | --- | --- | --- | --- | --- | --- | --- |
| 81 | 9 | **Masonry Work** |  | 110d | 2020-03-24 | 2020-08-25 |  | 80d |  |
| 82 | 9.1 | Rough-in plumbing at toilets and masonry walls |  | 4w | 2020-06-03 | 2020-06-30 | 78, 14 | 99d | 0d |
| 83 | 9.2 | Lay masonry at core, mechanical, and toilets |  | 4w | 2020-03-24 | 2020-04-20 | 52, 53 | 154d | 0d |
| 84 | 9.3 | Install exterior masonry work |  | 5w | 2020-07-14 | 2020-08-18 | 80 | 0d |  |
| 85 | 9.4 | Install roof drains |  | 2d | 2020-08-18 | 2020-08-20 | 84 | 73d | 0d |
| 86 | 9.5 | Install tile in toilet rooms |  | 2w | 2020-07-01 | 2020-07-14 | 82 | 99d | 0d |
| 87 | 9.6 | Clean masonry |  | 1w | 2020-08-18 | 2020-08-25 | 84 | 80d | 0d |
| 88 | 9.7 | Clean toilet room tile |  | 1w | 2020-07-15 | 2020-07-21 | 86 | 99d | 64d |
| 89 | 10 | **Roofing** |  | 810d | 2017-08-20 | 2020-09-28 |  | 0d |  |
| 90 | 10.1 | Install flashing at parapet walls | manual | 4d | 2017-08-20 | 2017-08-23 | 85 |  |  |
| 91 | 10.2 | Pour lightweight concrete roof fill |  | 2d | 2020-08-20 | 2020-08-24 | 12, 85, 90 | 77d | 0d |
| 92 | 10.3 | Install seamless roofing material |  | 5d | 2020-08-31 | 2020-09-07 | 91FS+5d | 77d | 0d |
| 93 | 10.4 | Spread stone ballast on seamless roof |  | 5d | 2020-09-07 | 2020-09-14 | 92 | 77d | 0d |
| 94 | 10.5 | Set rooftop equipment |  | 2w | 2020-09-14 | 2020-09-28 | 93 | 77d | 26d |
| 95 | 11 | **Window wall and store front closures** |  | 60d | 2020-08-18 | 2020-11-11 |  | 0d |  |
| 96 | 11.1 | Install window wall aluminum and glass |  | 5w | 2020-08-18 | 2020-09-22 | 84 | 0d |  |
| 97 | 11.2 | Install interior stud walls and drywall |  | 5w | 2020-09-22 | 2020-10-28 | 96 | 0d |  |
| 98 | 11.3 | Install interior doors and hardware |  | 2w | 2020-10-28 | 2020-11-11 | 97 | 5d |  |
| 99 | 11.4 | Install store front doors and hardware |  | 3w | 2020-08-18 | 2020-09-08 | 84 | 35d |  |
| 100 | 12 | **Finishing Building Works** |  | 80d | 2020-09-22 | 2021-01-14 |  | 23d |  |
| 101 | 12.1 | Install millwork and wood trim |  | 3w | 2020-10-28 | 2020-11-18 | 99, 97 | 0d |  |
| 102 | 12.2 | Paint walls and woodwork |  | 4w | 2020-11-18 | 2020-12-16 | 101, 98 | 0d |  |
| 103 | 12.3 | Install conduit at ceiling plenum space |  | 3w | 2020-09-22 | 2020-10-14 | 96 | 25d | 0d |
| 104 | 12.4 | Install duct in ceiling plenum space |  | 3w | 2020-10-28 | 2020-11-18 | 97, 103 | 20d | 0d |
| 105 | 12.5 | Install ceiling grid |  | 2w | 2020-11-18 | 2020-12-02 | 97, 104 | 20d | 0d |
| 106 | 12.6 | Install ceiling tile |  | 2w | 2020-12-02 | 2020-12-16 | 105 | 20d |  |
| 107 | 12.7 | Hang wallpaper |  | 2w | 2020-12-02 | 2020-12-16 | 105 | 20d |  |
| 108 | 12.8 | Install building carpet |  | 4w | 2020-12-16 | 2021-01-14 | 102 | 0d |  |
| 109 | 12.9 | Install hardware and accessories |  | 3w | 2020-12-16 | 2021-01-07 | 102 | 5d |  |
| 110 | 12.10 | Complete interior and exterior sod and plantings |  | 2w | 2020-12-16 | 2020-12-31 | 102 | 7d | 0d |
| 111 | 12.11 | Pave, curb, and stripe parking lot |  | 2w | 2020-12-31 | 2021-01-14 | 110 | 7d | 0d |
| 112 | 12.12 | Building works finished | milestone | 0d | 2021-01-14 | 2021-01-14 | 111 | 23d |  |

| ID | WBS | Task | Type | Duration | Start | Finish | Predecessors | Total slack | Free slack |
| --- | --- | --- | --- | --- | --- | --- | --- | --- | --- |
| 113 | 13 | **Setting and Testing Elevators** |  | 40d | 2020-04-21 | 2020-06-15 |  | 154d |  |
| 114 | 13.1 | Set elevator equipment in shafts |  | 4w | 2020-04-21 | 2020-05-18 | 83, 48, 13 | 154d | 0d |
| 115 | 13.2 | Set equipment in mechanical room |  | 2w | 2020-05-19 | 2020-06-01 | 114 | 154d | 0d |
| 116 | 13.3 | Test and align doors and equipment |  | 2w | 2020-06-02 | 2020-06-15 | 115 | 154d |  |
| 117 | 14 | **Plumbing** |  | 90d | 2020-08-25 | 2020-12-31 |  | 33d |  |
| 118 | 14.1 | Rough-in plumbing in drywall walls |  | 4w | 2020-09-22 | 2020-10-21 | 96 | 35d | 0d |
| 119 | 14.2 | Tie-in fire line riser and set valves |  | 2w | 2020-08-25 | 2020-09-08 | 87 | 80d | 70d |
| 120 | 14.3 | Set plumbing fixtures and trim |  | 3w | 2020-10-21 | 2020-11-11 | 88, 118, 82 | 35d | 25d |
| 121 | 14.4 | Flush, test, and clean piping and fixtures |  | 2w | 2020-12-16 | 2020-12-31 | 102, 119, 120 | 10d | 0d |
| 122 | 14.5 | Plumbing works completed | milestone | 0d | 2020-12-31 | 2020-12-31 | 121 | 33d |  |
| 123 | 15 | **Electrical Works** |  | 139d | 2020-06-03 | 2020-12-16 |  | 43d |  |
| 124 | 15.1 | Rough-in electrical in masonry walls |  | 4w | 2020-06-03 | 2020-06-30 | 78, 15 | 99d | 74d |
| 125 | 15.2 | Rough-in electrical in drywall walls |  | 4w | 2020-09-22 | 2020-10-21 | 96 | 35d | 10d |
| 126 | 15.3 | Pull wire in conduit and set area transformers |  | 3w | 2020-10-14 | 2020-11-04 | 124, 103 | 25d | 0d |
| 127 | 15.4 | Install and terminate electrical devices |  | 3w | 2020-11-04 | 2020-11-25 | 126, 125 | 25d | 5d |
| 128 | 15.5 | Make electrical terminations for HVAC equipment |  | 2d | 2020-11-04 | 2020-11-06 | 126, 94 | 51d | 18d |
| 129 | 15.6 | Install light fixtures - test and clean |  | 2w | 2020-12-02 | 2020-12-16 | 105, 127 | 20d | 0d |
| 130 | 15.7 | Electrical works completed | milestone | 0d | 2020-12-16 | 2020-12-16 | 129 | 43d |  |
| 131 | 16 | **Heating and Ventilating - AC** |  | 180d | 2020-04-21 | 2020-12-31 |  | 33d |  |
| 132 | 16.1 | Set equipment in mechanical room |  | 2w | 2020-04-21 | 2020-05-04 | 83, 16 | 168d | 100d |
| 133 | 16.2 | Rough-in mechanical in masonry walls |  | 4w | 2020-06-03 | 2020-06-30 | 78 | 127d | 59d |
| 134 | 16.3 | Rough-in mechanical in drywall walls |  | 2w | 2020-09-22 | 2020-10-07 | 96 | 93d |  |
| 135 | 16.4 | Install duct in building chase |  | 3w | 2020-09-22 | 2020-10-14 | 132, 133, 96 | 68d | 35d |
| 136 | 16.5 | Set HVAC trim and test and balance system |  | 4w | 2020-12-02 | 2020-12-31 | 105, 135, 128 | 33d |  |

| ID | WBS | Task | Type | Duration | Start | Finish | Predecessors | Total slack | Free slack | Resources | Work | Cost |
| --- | --- | --- | --- | --- | --- | --- | --- | --- | --- | --- | --- | --- |
| 137 | 17 | **Final Clean-up and Occupancy** |  | 60d | 2020-10-28 | 2021-01-21 |  | 18d |  |  |  |  |
| 138 | 17.1 | Install hard tile flooring in common areas |  | 1w | 2020-10-28 | 2020-11-04 | 97 | 46d | 0d |  |  |  |
| 139 | 17.2 | Clean hard tile floors |  | 4d | 2020-11-04 | 2020-11-10 | 138 | 46d |  |  |  |  |
| 140 | 17.3 | Remove debris from building and do final clean-up |  | 4d | 2021-01-14 | 2021-01-20 | 108, 107, 109, 110, 121, 129, 106, 139 | 0d |  |  |  |  |
| 141 | 17.4 | Substantial completion date |  | 1d | 2021-01-20 | 2021-01-21 | 140 | 18d | 0d |  |  |  |
| 142 | 17.5 | Ready for Occupancy | milestone | 0d | 2021-01-21 | 2021-01-21 | 141 | 18d |  |  |  |  |
| 143 | 18 | **Complete Final Inspections** |  | 6d | 2021-01-20 | 2021-01-28 |  | 0d |  |  | 8h | 360 |
| 144 | 18.1 | Complete elevator inspection and certification |  | 3d | 2021-01-20 | 2021-01-25 | 140, 116 | 0d |  |  |  |  |
| 145 | 18.2 | Perform architect's inspection |  | 1d | 2021-01-25 | 2021-01-26 | 140, 111, 144 | 0d |  | Superintendent [50%]; Project Management [50%] | 8h | 360 |
| 146 | 18.3 | Perform local building agency inspection |  | 1d | 2021-01-26 | 2021-01-27 | 145 | 0d |  |  |  |  |
| 147 | 18.4 | Perform Fire Marshal's inspection |  | 1d | 2021-01-27 | 2021-01-28 | 146 | 0d |  |  |  |  |
| 148 | 18.5 | Final inspection completed | milestone | 0d | 2021-01-28 | 2021-01-28 | 147 | 13d |  |  |  |  |
| 149 | 19 | **Project Closure** |  | 13d | 2021-01-28 | 2021-02-16 |  | 0d |  |  |  |  |
| 150 | 19.1 | Complete punch list items from all inspections |  | 2w | 2021-01-28 | 2021-02-11 | 147 | 0d |  |  |  |  |
| 151 | 19.2 | Obtain certificate of occupancy |  | 2d | 2021-02-11 | 2021-02-15 | 150 | 0d |  |  |  |  |
| 152 | 19.3 | Issue final completion documents including warranties |  | 1d | 2021-02-11 | 2021-02-12 | 150 | 1d |  |  |  |  |
| 153 | 19.4 | Issue final request for payment |  | 1d | 2021-02-15 | 2021-02-16 | 151, 152 | 0d |  |  |  |  |
| 154 | 19.5 | Payments cleared & Project completed successfully | milestone | 0d | 2021-02-16 | 2021-02-16 | 153 | 0d |  |  |  |  |
