# Commercial Office Space Construction

Schedule from MS Project, 2017-08-20 to 2021-02-23, status date 2019-12-01, costs in $, A marks actual dates.

## Calendars

- Construction Calendar: Mon-Fri 08:30-12:30, 13:30-17:30; Sat-Sun off. Exceptions (off unless hours are given): 2020-08-15 (INDEPENDENCE DAY), 2020-10-02 (GANDHI JAYANTI), 2020-12-25 (CHRISTMAS).

## Resources

| Resource | Unit | Rate | Cost per use |
| --- | --- | --- | --- |
| General Manager |  | 100 |  |
| Steel | ton | 600 | 50 |
| Flight Fare |  |  |  |
| Steel Erection Contractor Management |  | 25 |  |
| Site Grading Contractor |  | 12 |  |
| Steel Erection Contractor |  | 12 |  |
| Project Management |  | 90 |  |
| Procurement |  | 35 |  |
| Scheduler |  | 25 |  |
| Accounting |  | 30 |  |
| Superintendent |  | 40 |  |
| Survey Unit |  | 12 |  |
| Rough Carpenter Unit |  | 12 |  |
| Labor Unit |  | 12 |  |
| Concrete Unit |  | 12 |  |
| Finish Carpenter Unit |  | 12 |  |
| Plumbing Contractor |  | 12 |  |
| Plumbing Contractor Management |  | 25 |  |
| Electric Contractor |  | 12 |  |
| Electric Contractor Management |  | 25 |  |
| HVAC Contractor |  | 12 |  |
| HVAC Contractor Management |  | 25 |  |
| Elevator Contractor |  | 12 |  |
| Elevator Contractor Management |  | 25 |  |
| Drywall Contractor |  | 12 |  |
| Masonry Contractor |  | 12 |  |
| Tile Contractor |  | 12 |  |
| Roofing Contractor |  | 12 |  |
| Roofing Contractor Management |  | 25 |  |
| Window Contractor |  | 12 |  |
| Carpet Contractor |  | 12 |  |
| Landscape Contractor |  | 12 |  |
| Paving Contractor |  | 12 |  |
| Painting Contractor |  | 12 |  |

## Schedule

| ID | WBS | Task | Type | Duration | Start | Finish | Predecessors | Complete | Remaining | Baseline start | Baseline finish | Baseline duration | Total slack | Free slack | Constraint | Deadline | Resources | Work | Actual work | Cost | Baseline cost | Actual cost |
| --- | --- | --- | --- | --- | --- | --- | --- | --- | --- | --- | --- | --- | --- | --- | --- | --- | --- | --- | --- | --- | --- | --- |
| 1 | 1 | **General Conditions** |  | 24d | 2019-10-21 A | 2019-11-21 A |  | 100% |  | 2019-10-21 | 2019-11-21 | 24d |  |  |  |  |  | 193.6h | 193.6h | 13,900 | 13,900 | 13,600 |
| 2 | 1.1 | Receiving notice to proceed and sign contract |  | 3d | 2019-10-21 A | 2019-10-23 A |  | 100% |  | 2019-10-21 | 2019-10-23 | 3d |  |  | start no earlier than 2019-10-21 |  | General Manager | 24h | 24h | 2,400 | 2,400 | 2,400 |
| 3 | 1.2 | Submitting bond and insurance documents |  | 2d | 2019-10-24 A | 2019-10-25 A | 2 | 100% |  | 2019-10-24 | 2019-10-25 | 2d |  |  |  |  | Project Management; General Manager [25%] | 20h | 20h | 1,840 | 1,840 | 1,840 |
| 4 | 1.3 | Preparing and submitting project schedule |  | 2d | 2019-10-28 A | 2019-10-29 A | 3 | 100% |  | 2019-10-28 | 2019-10-29 | 2d |  |  |  |  | Project Management [25%]; Scheduler | 20h | 20h | 760 | 760 | 760 |
| 5 | 1.4 | Preparing and submitting schedule of values |  | 2d | 2019-10-30 A | 2019-10-31 A | 4 | 100% |  | 2019-10-30 | 2019-10-31 | 2d |  |  |  |  | General Manager [10%]; Project Management | 17.6h | 17.6h | 1,600 | 1,600 | 1,600 |
| 6 | 1.5 | Obtaining building permits |  | 4d | 2019-11-05 A | 2019-11-08 A | 5FS+2d | 100% |  | 2019-11-05 | 2019-11-08 | 4d |  |  |  | 2019-11-08 | Project Management [50%]; Procurement [50%] | 32h | 32h | 2,000 | 2,000 | 2,000 |
| 7 | 1.6 | Building permits obtained | milestone | 0d | 2019-11-08 A | 2019-11-08 A | 6 | 100% |  | 2019-11-08 | 2019-11-08 |  |  |  |  |  |  |  |  |  |  |  |
| 8 | 1.7 | Submitting preliminary shop drawings |  | 2w | 2019-11-08 A | 2019-11-21 A | 6FS-1d | 100% |  | 2019-11-08 | 2019-11-21 | 2w |  |  |  |  | Project Management [50%]; Procurement [50%]; Flight Fare [0.1%] | 80h | 80h | 5,300 | 5,300 | 5,000 |
| 9 | 1.8 | Submitting monthly requests for payment |  | 1d | 2019-10-24 A | 2019-10-24 A | 2 | 100% |  | 2019-10-24 | 2019-10-24 | 1d |  |  |  |  |  |  |  |  |  |  |
| 10 | 2 | **Long Lead Procurement** |  | 70d | 2019-10-25 A | 2020-01-30 |  | 52% | 33.79d | 2019-10-25 | 2020-01-30 | 70d | 275d |  |  |  |  | 928h | 480h | 20,080 | 20,880 | 11,168 |
| 11 | 2.1 | Submitting shop drawings and order long lead items - steel |  | 2w | 2019-10-25 A | 2019-11-07 A | 9 | 100% |  | 2019-10-25 | 2019-11-07 | 2w |  |  |  |  | Steel Erection Contractor Management | 80h | 80h | 2,000 | 2,000 | 2,000 |
| 12 | 2.2 | Submitting shop drawings and order long lead items - roofing |  | 1.2w | 2019-11-22 A | 2019-11-29 A | 8 | 100% |  | 2019-11-22 | 2019-12-05 | 2w |  |  |  |  | Roofing Contractor Management | 48h | 48h | 1,200 | 2,000 | 1,200 |
| 13 | 2.3 | Submitting shop drawings and order long lead items - elevator |  | 2w | 2019-11-22 A | 2019-12-05 A | 8 | 100% |  | 2019-11-22 | 2019-12-05 | 2w |  |  |  |  | Elevator Contractor Management | 80h | 80h | 2,000 | 2,000 | 2,000 |
| 14 | 2.4 | Submitting shop drawings and order long lead items - plumbing |  | 2w | 2019-11-22 A | 2019-12-05 | 8 | 60% | 0.8w | 2019-11-22 | 2019-12-05 | 2w | 97d |  |  |  | Plumbing Contractor Management | 80h | 48h | 2,000 | 2,000 | 1,200 |
| 15 | 2.5 | Submitting shop drawings and order long lead items - electric |  | 2w | 2019-11-22 A | 2019-12-05 | 8 | 60% | 0.8w | 2019-11-22 | 2019-12-05 | 2w | 97d |  |  |  | Electric Contractor Management | 80h | 48h | 2,000 | 2,000 | 1,200 |
| 16 | 2.6 | Submitting shop drawings and order long lead items - HVAC |  | 2w | 2019-11-22 A | 2019-12-05 | 8 | 60% | 0.8w | 2019-11-22 | 2019-12-05 | 2w | 97d |  |  |  | HVAC Contractor Management | 80h | 48h | 2,000 | 2,000 | 1,200 |
| 17 | 2.7 | Detail, fabricate and deliver steel |  | 12w | 2019-11-08 A | 2020-01-30 | 11 | 27% | 8.8w | 2019-11-08 | 2020-01-30 | 12w | 7d | 0d |  |  | Steel Erection Contractor Management [50%]; Steel Erection Contractor [50%] | 480h | 128h | 8,880 | 8,880 | 2,368 |
| 18 | 2.8 | Procurement completed | milestone | 0d | 2020-01-30 | 2020-01-30 | 17 |  |  | 2020-01-30 | 2020-01-30 |  | 270d |  |  |  |  |  |  |  |  |  |
| 19 | 3 | **Mobilize on Site** |  | 11d? | 2019-10-24 A | 2019-11-07 |  | 54% | 5.08d? | 2019-10-24 | 2019-11-07 | 11d? | 335d |  |  |  |  | 100h | 58.4h | 1,872 | 1,872 | 1,372.8 |
| 20 | 3.1 | Install temporary power |  | 2d | 2019-10-24 A | 2019-10-25 A | 2 | 100% |  | 2019-10-24 | 2019-10-25 | 2d |  |  |  |  | Electric Contractor | 16h | 16h | 192 | 192 | 192 |
| 21 | 3.2 | Install temporary water service |  | 2d | 2019-10-24 A | 2019-10-25 A | 2 | 100% |  | 2019-10-24 | 2019-10-25 | 2d |  |  |  |  | Plumbing Contractor | 16h | 16h | 192 | 192 | 192 |
| 22 | 3.3 | Set up site office |  | 3d | 2019-10-28 A | 2019-10-30 A | 20, 21 | 100% |  | 2019-10-28 | 2019-10-30 | 3d |  |  |  |  | Superintendent; Labor Unit [10%] | 26.4h | 26.4h | 988.8 | 988.8 | 988.8 |
| 23 | 3.4 | Set line and grade benchmarks |  | 3d | 2019-10-31 | 2019-11-04 | 22 |  |  | 2019-10-31 | 2019-11-04 | 3d | 0d |  |  |  | Survey Unit | 24h |  | 288 | 288 |  |
| 24 | 3.5 | Prepare site - lay down yard and temporary fencing |  | 2d | 2019-11-05 | 2019-11-06 | 23 |  |  | 2019-11-05 | 2019-11-06 | 2d | 0d |  |  |  | Site Grading Contractor; Labor Unit [10%] | 17.6h |  | 211.2 | 211.2 |  |
| 25 | 3.6 | Mobilization completed | milestone | 1d? | 2019-11-07 | 2019-11-07 | 24 |  |  | 2019-11-07 | 2019-11-07 | 1d? | 330d |  |  |  |  |  |  |  |  |  |

| ID | WBS | Task | Duration | Start | Finish | Predecessors | Baseline start | Baseline finish | Baseline duration | Total slack | Free slack | Resources | Work | Cost | Baseline cost |
| --- | --- | --- | --- | --- | --- | --- | --- | --- | --- | --- | --- | --- | --- | --- | --- |
| 26 | 4 | **Site Grading and Utilities** | 35d | 2019-11-07 | 2019-12-25 |  | 2019-11-07 | 2019-12-25 | 35d | 0d |  |  | 360h | 4,320 | 4,320 |
| 27 | 4.1 | Clear and grub site | 3d | 2019-11-07 | 2019-11-11 | 22, 24 | 2019-11-07 | 2019-11-11 | 3d | 0d |  | Site Grading Contractor | 24h | 288 | 288 |
| 28 | 4.2 | Stone site access and temporary parking area | 2d | 2019-11-12 | 2019-11-13 | 27, 24 | 2019-11-12 | 2019-11-13 | 2d | 0d |  | Site Grading Contractor | 16h | 192 | 192 |
| 29 | 4.3 | Rough grade site (cut and fill) | 1w | 2019-11-14 | 2019-11-20 | 28 | 2019-11-14 | 2019-11-20 | 1w | 0d |  | Site Grading Contractor | 40h | 480 | 480 |
| 30 | 4.4 | Install storm drainage | 2w | 2019-11-21 | 2019-12-04 | 29 | 2019-11-21 | 2019-12-04 | 2w | 9d |  | Site Grading Contractor | 80h | 960 | 960 |
| 31 | 4.5 | Install exterior fire line and building fire riser | 2w | 2019-11-21 | 2019-12-04 | 29 | 2019-11-21 | 2019-12-04 | 2w | 0d |  | Plumbing Contractor | 80h | 960 | 960 |
| 32 | 4.6 | Perform final site grading | 2w | 2019-12-05 | 2019-12-18 | 30FF+1d, 31 | 2019-12-05 | 2019-12-18 | 2w | 0d |  | Site Grading Contractor | 80h | 960 | 960 |
| 33 | 4.7 | Erect building batter boards and layout building | 1w | 2019-12-19 | 2019-12-25 | 32 | 2019-12-19 | 2019-12-25 | 1w | 0d |  | Survey Unit | 40h | 480 | 480 |
| 34 | 5 | **Excavation and Foundations** | 33d | 2019-12-26 | 2020-02-10 |  | 2019-12-26 | 2020-02-10 | 33d | 0d |  |  | 300h | 6,650 | 6,650 |
| 35 | 5.1 | Excavate foundations | 2w | 2019-12-26 | 2020-01-08 | 33 | 2019-12-26 | 2020-01-08 | 2w | 0d |  | Site Grading Contractor [50%]; Steel [5 ton] | 40h | 3,530 | 3,530 |
| 36 | 5.2 | Excavate elevator pit | 2d | 2019-12-26 | 2019-12-27 | 33 | 2019-12-26 | 2019-12-27 | 2d | 214d | 0d | Site Grading Contractor | 16h | 192 | 192 |
| 37 | 5.3 | Form column piers and spread foundations | 4d | 2020-01-09 | 2020-01-14 | 35 | 2020-01-09 | 2020-01-14 | 4d | 0d |  |  |  |  |  |
| 38 | 5.4 | Rough-in electric and plumbing in elevator | 4d | 2019-12-30 | 2020-01-02 | 36 | 2019-12-30 | 2020-01-02 | 4d | 214d | 0d | Plumbing Contractor; Electric Contractor | 64h | 768 | 768 |
| 39 | 5.5 | Form elevator pit walls | 4d | 2020-01-03 | 2020-01-08 | 38 | 2020-01-03 | 2020-01-08 | 4d | 214d | 0d | Rough Carpenter Unit | 32h | 384 | 384 |
| 40 | 5.6 | Set reinforcing and anchor bolts | 4d | 2020-01-15 | 2020-01-20 | 37 | 2020-01-15 | 2020-01-20 | 4d | 0d |  | Rough Carpenter Unit | 32h | 384 | 384 |
| 41 | 5.7 | Pour column piers and foundations | 5d | 2020-01-21 | 2020-01-27 | 40 | 2020-01-21 | 2020-01-27 | 5d | 0d |  | Concrete Unit | 40h | 480 | 480 |
| 42 | 5.8 | Pour concrete elevator walls | 1d | 2020-01-09 | 2020-01-09 | 39 | 2020-01-09 | 2020-01-09 | 1d | 214d | 0d | Concrete Unit | 8h | 96 | 96 |
| 43 | 5.9 | Cure elevator wall concrete | 7d | 2020-01-10 | 2020-01-20 | 42 | 2020-01-10 | 2020-01-20 | 7d | 214d | 0d | Labor Unit [10%] | 5.6h | 67.2 | 67.2 |
| 44 | 5.10 | Cure piers and foundations | 7d | 2020-01-28 | 2020-02-05 | 41 | 2020-01-28 | 2020-02-05 | 7d | 0d |  | Labor Unit [10%] | 5.6h | 67.2 | 67.2 |
| 45 | 5.11 | Strip wall forms | 1d | 2020-01-21 | 2020-01-21 | 43 | 2020-01-21 | 2020-01-21 | 1d | 214d | 0d | Labor Unit [10%] | 0.8h | 9.6 | 9.6 |
| 46 | 5.12 | Strip column piers and foundation forms | 3d | 2020-02-06 | 2020-02-10 | 44 | 2020-02-06 | 2020-02-10 | 3d | 0d |  | Labor Unit | 24h | 288 | 288 |
| 47 | 5.13 | Install pneumatic tube in elevator pit | 3d | 2020-01-22 | 2020-01-24 | 45 | 2020-01-22 | 2020-01-24 | 3d | 214d | 0d | Elevator Contractor | 24h | 288 | 288 |
| 48 | 5.14 | Prepare and pour concrete floor in elevator pit | 1d | 2020-01-27 | 2020-01-27 | 47 | 2020-01-27 | 2020-01-27 | 1d | 214d | 65d | Concrete Unit | 8h | 96 | 96 |
| 49 | 6 | **Column Erection and Miscellaneous steel works** | 50d | 2020-02-11 | 2020-04-20 |  | 2020-02-11 | 2020-04-13 | 45d | 0d |  |  | 368h | 4,416 | 3,936 |
| 50 | 6.1 | Erect steel columns, beams and joint - 1st and 2nd floors | 3w | 2020-02-11 | 2020-03-02 | 46, 17 | 2020-02-11 | 2020-02-24 | 2w | 0d |  | Steel Erection Contractor | 120h | 1,440 | 960 |
| 51 | 6.2 | Erect steel columns, beams and joint - 3rd floor and roof | 2w | 2020-03-03 | 2020-03-16 | 50 | 2020-02-25 | 2020-03-09 | 2w | 0d |  | Steel Erection Contractor | 80h | 960 | 960 |
| 52 | 6.3 | Install miscellaneous iron and bracing - 1st and 2nd floors | 2w | 2020-03-03 | 2020-03-16 | 50 | 2020-02-25 | 2020-03-09 | 2w | 164d | 10d | Steel Erection Contractor [75%] | 60h | 720 | 720 |
| 53 | 6.4 | Install miscellaneous iron and bracing - 3rd floor and roof | 2w | 2020-03-17 | 2020-03-30 | 51 | 2020-03-10 | 2020-03-23 | 2w | 0d |  | Steel Erection Contractor [75%] | 60h | 720 | 720 |
| 54 | 6.5 | Install stairs and miscellaneous iron railing | 2w | 2020-03-31 | 2020-04-13 | 53 | 2020-03-24 | 2020-04-06 | 2w | 0d |  | Steel Erection Contractor [50%] | 40h | 480 | 480 |
| 55 | 6.6 | Touch-up paint on steel | 1w | 2020-04-14 | 2020-04-20 | 54 | 2020-04-07 | 2020-04-13 | 1w | 0d |  | Steel Erection Contractor [20%] | 8h | 96 | 96 |

| ID | WBS | Task | Duration | Start | Finish | Predecessors | Baseline start | Baseline finish | Baseline duration | Total slack | Free slack | Resources | Work | Cost | Baseline cost |
| --- | --- | --- | --- | --- | --- | --- | --- | --- | --- | --- | --- | --- | --- | --- | --- |
| 56 | 7 | **Forming, Pouring, & Curing - Floors and Roof** | 85d | 2020-03-03 | 2020-06-29 |  | 2020-02-25 | 2020-06-22 | 85d | 35d |  |  | 600.88h | 7,210.56 | 7,210.56 |
| 57 | 7.1 | Form 2nd floor including all floor openings | 5d | 2020-04-21 | 2020-04-27 | 55, 14, 15, 16, 50 | 2020-04-14 | 2020-04-20 | 5d | 0d |  | Rough Carpenter Unit; Labor Unit [20%] | 48h | 576 | 576 |
| 58 | 7.2 | Install rebar and in-floor utilities (including mechanical, electrical, plumbing) | 5d | 2020-03-03 | 2020-03-09 | 50 | 2020-02-25 | 2020-03-02 | 5d | 35d |  | Labor Unit [33%]; Plumbing Contractor [33%]; Electric Contractor [33%] | 39.6h | 475.2 | 475.2 |
| 59 | 7.3 | Pour 2nd floor slab | 4d | 2020-04-28 | 2020-05-01 | 58, 57 | 2020-04-21 | 2020-04-24 | 4d | 0d |  | Concrete Unit | 32h | 384 | 384 |
| 60 | 7.4 | Cure 2nd floor slab | 7d | 2020-05-04 | 2020-05-12 | 59 | 2020-04-27 | 2020-05-05 | 7d | 0d |  | Labor Unit [10%] | 5.6h | 67.2 | 67.2 |
| 61 | 7.5 | Strip forms from 2nd floor slab | 2d | 2020-05-13 | 2020-05-14 | 60 | 2020-05-06 | 2020-05-07 | 2d | 99d | 0d | Labor Unit | 16h | 192 | 192 |
| 62 | 7.6 | Form 3rd floor including all floor openings | 5d | 2020-05-13 | 2020-05-19 | 60 | 2020-05-06 | 2020-05-12 | 5d | 0d |  | Rough Carpenter Unit [50%]; Labor Unit [20%] | 28h | 336 | 336 |
| 63 | 7.7 | Install rebar and in-floor utilities (including mechanical, electrical, plumbing) | 5d | 2020-05-13 | 2020-05-19 | 60 | 2020-05-06 | 2020-05-12 | 5d | 0d |  | Labor Unit [33%]; Plumbing Contractor [33%]; Electric Contractor [33%] | 39.6h | 475.2 | 475.2 |
| 64 | 7.8 | Pour 3rd floor slab | 4d | 2020-05-20 | 2020-05-25 | 63, 62 | 2020-05-13 | 2020-05-18 | 4d | 0d |  | Concrete Unit | 32h | 384 | 384 |
| 65 | 7.9 | Cure 3rd floor slab | 7d | 2020-05-26 | 2020-06-03 | 64 | 2020-05-19 | 2020-05-27 | 7d | 0d |  | Labor Unit [10%] | 5.6h | 67.2 | 67.2 |
| 66 | 7.10 | Strip forms from 3rd floor slab | 2d | 2020-06-04 | 2020-06-05 | 65 | 2020-05-28 | 2020-05-29 | 2d | 16d |  | Labor Unit | 16h | 192 | 192 |
| 67 | 7.11 | Form roof slab including all floor openings | 5d | 2020-06-04 | 2020-06-10 | 65 | 2020-05-28 | 2020-06-03 | 5d | 0d |  | Rough Carpenter Unit; Labor Unit [20%] | 48h | 576 | 576 |
| 68 | 7.12 | Install rebar and in-floor utilities (including mechanical, electrical, plumbing) | 5d | 2020-06-04 | 2020-06-10 | 65 | 2020-05-28 | 2020-06-03 | 5d | 0d |  | Labor Unit [33%]; Plumbing Contractor [33%]; Electric Contractor [33%] | 39.6h | 475.2 | 475.2 |
| 69 | 7.13 | Pour roof slab | 4d | 2020-06-11 | 2020-06-16 | 68, 67 | 2020-06-04 | 2020-06-09 | 4d | 0d |  | Concrete Unit | 32h | 384 | 384 |
| 70 | 7.14 | Cure roof slab | 7d | 2020-06-17 | 2020-06-25 | 69 | 2020-06-10 | 2020-06-18 | 7d | 0d |  | Labor Unit [10%] | 5.6h | 67.2 | 67.2 |
| 71 | 7.15 | Strip forms from roof slab | 2d | 2020-06-26 | 2020-06-29 | 70 | 2020-06-19 | 2020-06-22 | 2d | 0d |  | Labor Unit | 16h | 192 | 192 |
| 72 | 7.16 | Form 1st floor | 4d | 2020-05-15 | 2020-05-20 | 61 | 2020-05-08 | 2020-05-13 | 4d | 100d | 1d | Rough Carpenter Unit | 32h | 384 | 384 |
| 73 | 7.17 | Install electrical underground | 1w | 2020-05-15 | 2020-05-21 | 61 | 2020-05-08 | 2020-05-14 | 1w | 99d | 0d | Electric Contractor | 40h | 480 | 480 |
| 74 | 7.18 | Install plumbing underground | 1w | 2020-05-15 | 2020-05-21 | 61 | 2020-05-08 | 2020-05-14 | 1w | 99d | 0d | Plumbing Contractor | 40h | 480 | 480 |
| 75 | 7.19 | Install rebar and in-floor utilities | 4d | 2020-05-15 | 2020-05-20 | 61 | 2020-05-08 | 2020-05-13 | 4d | 100d | 1d | Labor Unit [33%]; Plumbing Contractor [33%]; Electric Contractor [33%] | 31.68h | 380.16 | 380.16 |
| 76 | 7.20 | Pour 1st floor slab | 4d | 2020-05-22 | 2020-05-27 | 72, 75, 73, 74 | 2020-05-15 | 2020-05-20 | 4d | 99d | 0d | Concrete Unit | 32h | 384 | 384 |
| 77 | 7.21 | Cure 1st floor slab | 7d | 2020-05-28 | 2020-06-05 | 76 | 2020-05-21 | 2020-05-29 | 7d | 99d | 0d | Labor Unit [10%] | 5.6h | 67.2 | 67.2 |
| 78 | 7.22 | Strip forms from 1st floor slab | 2d | 2020-06-08 | 2020-06-09 | 77 | 2020-06-01 | 2020-06-02 | 2d | 99d | 0d | Labor Unit | 16h | 192 | 192 |
| 79 | 8 | **Carpentry Work** | 15d | 2020-06-30 | 2020-07-20 |  | 2020-06-23 | 2020-07-13 | 15d | 0d |  |  | 120h | 1,440 | 1,440 |
| 80 | 8.1 | Install exterior sheathing and metal studs | 3w | 2020-06-30 | 2020-07-20 | 66, 71 | 2020-06-23 | 2020-07-13 | 3w | 0d |  | Drywall Contractor | 120h | 1,440 | 1,440 |

| ID | WBS | Task | Type | Duration | Start | Finish | Predecessors | Baseline start | Baseline finish | Baseline duration | Total slack | Free slack | Resources | Work | Cost | Baseline cost |
| --- | --- | --- | --- | --- | --- | --- | --- | --- | --- | --- | --- | --- | --- | --- | --- | --- |
| 81 | 9 | **Masonry Work** |  | 110d | 2020-03-31 | 2020-09-01 |  | 2020-03-24 | 2020-08-25 | 110d | 80d |  |  | 656h | 7,872 | 7,872 |
| 82 | 9.1 | Rough-in plumbing at toilets and masonry walls |  | 4w | 2020-06-10 | 2020-07-07 | 78, 14 | 2020-06-03 | 2020-06-30 | 4w | 99d | 0d | Plumbing Contractor | 160h | 1,920 | 1,920 |
| 83 | 9.2 | Lay masonry at core, mechanical, and toilets |  | 4w | 2020-03-31 | 2020-04-27 | 52, 53 | 2020-03-24 | 2020-04-20 | 4w | 154d | 0d | Masonry Contractor | 160h | 1,920 | 1,920 |
| 84 | 9.3 | Install exterior masonry work |  | 5w | 2020-07-21 | 2020-08-25 | 80 | 2020-07-14 | 2020-08-18 | 5w | 0d |  | Masonry Contractor | 200h | 2,400 | 2,400 |
| 85 | 9.4 | Install roof drains |  | 2d | 2020-08-25 | 2020-08-27 | 84 | 2020-08-18 | 2020-08-20 | 2d | 73d | 0d | Roofing Contractor | 16h | 192 | 192 |
| 86 | 9.5 | Install tile in toilet rooms |  | 2w | 2020-07-08 | 2020-07-21 | 82 | 2020-07-01 | 2020-07-14 | 2w | 99d | 0d | Tile Contractor | 80h | 960 | 960 |
| 87 | 9.6 | Clean masonry |  | 1w | 2020-08-25 | 2020-09-01 | 84 | 2020-08-18 | 2020-08-25 | 1w | 80d | 0d | Masonry Contractor [50%] | 20h | 240 | 240 |
| 88 | 9.7 | Clean toilet room tile |  | 1w | 2020-07-22 | 2020-07-28 | 86 | 2020-07-15 | 2020-07-21 | 1w | 99d | 64d | Tile Contractor [50%] | 20h | 240 | 240 |
| 89 | 10 | **Roofing** |  | 815d | 2017-08-20 | 2020-10-06 |  | 2017-08-20 | 2020-09-28 | 810d | 0d |  |  | 208h | 2,496 | 2,496 |
| 90 | 10.1 | Install flashing at parapet walls | manual | 4d | 2017-08-20 | 2017-08-23 | 85 | 2017-08-20 | 2017-08-23 | 4d |  |  | Roofing Contractor | 32h | 384 | 384 |
| 91 | 10.2 | Pour lightweight concrete roof fill |  | 2d | 2020-08-27 | 2020-08-31 | 12, 85, 90 | 2020-08-20 | 2020-08-24 | 2d | 77d | 0d | Roofing Contractor | 16h | 192 | 192 |
| 92 | 10.3 | Install seamless roofing material |  | 5d | 2020-09-07 | 2020-09-14 | 91FS+5d | 2020-08-31 | 2020-09-07 | 5d | 77d | 0d | Roofing Contractor | 40h | 480 | 480 |
| 93 | 10.4 | Spread stone ballast on seamless roof |  | 5d | 2020-09-14 | 2020-09-21 | 92 | 2020-09-07 | 2020-09-14 | 5d | 77d | 0d | Roofing Contractor | 40h | 480 | 480 |
| 94 | 10.5 | Set rooftop equipment |  | 2w | 2020-09-21 | 2020-10-06 | 93 | 2020-09-14 | 2020-09-28 | 2w | 77d | 26d | HVAC Contractor | 80h | 960 | 960 |
| 95 | 11 | **Window wall and store front closures** |  | 60d | 2020-08-25 | 2020-11-18 |  | 2020-08-18 | 2020-11-11 | 60d | 0d |  |  | 600h | 7,200 | 7,200 |
| 96 | 11.1 | Install window wall aluminum and glass |  | 5w | 2020-08-25 | 2020-09-29 | 84 | 2020-08-18 | 2020-09-22 | 5w | 0d |  | Window Contractor | 200h | 2,400 | 2,400 |
| 97 | 11.2 | Install interior stud walls and drywall |  | 5w | 2020-09-29 | 2020-11-04 | 96 | 2020-09-22 | 2020-10-28 | 5w | 0d |  | Drywall Contractor | 200h | 2,400 | 2,400 |
| 98 | 11.3 | Install interior doors and hardware |  | 2w | 2020-11-04 | 2020-11-18 | 97 | 2020-10-28 | 2020-11-11 | 2w | 5d |  | Finish Carpenter Unit | 80h | 960 | 960 |
| 99 | 11.4 | Install store front doors and hardware |  | 3w | 2020-08-25 | 2020-09-15 | 84 | 2020-08-18 | 2020-09-08 | 3w | 35d |  | Window Contractor | 120h | 1,440 | 1,440 |
| 100 | 12 | **Finishing Building Works** |  | 80d | 2020-09-29 | 2021-01-21 |  | 2020-09-22 | 2021-01-14 | 80d | 20d |  |  | 1200h | 14,400 | 14,400 |
| 101 | 12.1 | Install millwork and wood trim |  | 3w | 2020-11-04 | 2020-11-25 | 99, 97 | 2020-10-28 | 2020-11-18 | 3w | 0d |  | Finish Carpenter Unit | 120h | 1,440 | 1,440 |
| 102 | 12.2 | Paint walls and woodwork |  | 4w | 2020-11-25 | 2020-12-23 | 101, 98 | 2020-11-18 | 2020-12-16 | 4w | 0d |  | Painting Contractor | 160h | 1,920 | 1,920 |
| 103 | 12.3 | Install conduit at ceiling plenum space |  | 3w | 2020-09-29 | 2020-10-21 | 96 | 2020-09-22 | 2020-10-14 | 3w | 20d | 0d | Electric Contractor | 120h | 1,440 | 1,440 |
| 104 | 12.4 | Install duct in ceiling plenum space |  | 3w | 2020-11-04 | 2020-11-25 | 97, 103 | 2020-10-28 | 2020-11-18 | 3w | 10d | 0d | HVAC Contractor | 120h | 1,440 | 1,440 |
| 105 | 12.5 | Install ceiling grid |  | 2w | 2020-11-25 | 2020-12-09 | 97, 104 | 2020-11-18 | 2020-12-02 | 2w | 10d | 0d | Drywall Contractor | 80h | 960 | 960 |
| 106 | 12.6 | Install ceiling tile |  | 2w | 2020-12-09 | 2020-12-23 | 105 | 2020-12-02 | 2020-12-16 | 2w | 10d | 0d | Drywall Contractor | 80h | 960 | 960 |
| 107 | 12.7 | Hang wallpaper |  | 2w | 2020-12-23 | 2021-01-07 | 106 | 2020-12-02 | 2020-12-16 | 2w | 10d |  | Painting Contractor | 80h | 960 | 960 |
| 108 | 12.8 | Install building carpet |  | 4w | 2020-12-23 | 2021-01-21 | 102 | 2020-12-16 | 2021-01-14 | 4w | 0d |  | Carpet Contractor | 160h | 1,920 | 1,920 |
| 109 | 12.9 | Install hardware and accessories |  | 3w | 2020-12-23 | 2021-01-14 | 102 | 2020-12-16 | 2021-01-07 | 3w | 5d |  | Finish Carpenter Unit | 120h | 1,440 | 1,440 |
| 110 | 12.10 | Complete interior and exterior sod and plantings |  | 2w | 2020-12-23 | 2021-01-07 | 102 | 2020-12-16 | 2020-12-31 | 2w | 7d | 0d | Landscape Contractor | 80h | 960 | 960 |
| 111 | 12.11 | Pave, curb, and stripe parking lot |  | 2w | 2021-01-07 | 2021-01-21 | 110 | 2020-12-31 | 2021-01-14 | 2w | 7d | 0d | Paving Contractor | 80h | 960 | 960 |
| 112 | 12.12 | Building works finished | milestone | 0d | 2021-01-21 | 2021-01-21 | 111 | 2021-01-14 | 2021-01-14 |  | 23d |  |  |  |  |  |

| ID | WBS | Task | Type | Duration | Start | Finish | Predecessors | Baseline start | Baseline finish | Baseline duration | Total slack | Free slack | Resources | Work | Cost | Baseline cost |
| --- | --- | --- | --- | --- | --- | --- | --- | --- | --- | --- | --- | --- | --- | --- | --- | --- |
| 113 | 13 | **Setting and Testing Elevators** |  | 40d | 2020-04-28 | 2020-06-22 |  | 2020-04-21 | 2020-06-15 | 40d | 154d |  |  | 320h | 3,840 | 3,840 |
| 114 | 13.1 | Set elevator equipment in shafts |  | 4w | 2020-04-28 | 2020-05-25 | 83, 48, 13 | 2020-04-21 | 2020-05-18 | 4w | 154d | 0d | Elevator Contractor | 160h | 1,920 | 1,920 |
| 115 | 13.2 | Set equipment in mechanical room |  | 2w | 2020-05-26 | 2020-06-08 | 114 | 2020-05-19 | 2020-06-01 | 2w | 154d | 0d | Elevator Contractor | 80h | 960 | 960 |
| 116 | 13.3 | Test and align doors and equipment |  | 2w | 2020-06-09 | 2020-06-22 | 115 | 2020-06-02 | 2020-06-15 | 2w | 154d |  | Elevator Contractor | 80h | 960 | 960 |
| 117 | 14 | **Plumbing** |  | 90d | 2020-09-01 | 2021-01-07 |  | 2020-08-25 | 2020-12-31 | 90d | 33d |  |  | 440h | 5,280 | 5,280 |
| 118 | 14.1 | Rough-in plumbing in drywall walls |  | 4w | 2020-09-29 | 2020-10-28 | 96 | 2020-09-22 | 2020-10-21 | 4w | 35d | 0d | Plumbing Contractor | 160h | 1,920 | 1,920 |
| 119 | 14.2 | Tie-in fire line riser and set valves |  | 2w | 2020-09-01 | 2020-09-15 | 87 | 2020-08-25 | 2020-09-08 | 2w | 80d | 70d | Plumbing Contractor | 80h | 960 | 960 |
| 120 | 14.3 | Set plumbing fixtures and trim |  | 3w | 2020-10-28 | 2020-11-18 | 88, 118, 82 | 2020-10-21 | 2020-11-11 | 3w | 35d | 25d | Plumbing Contractor | 120h | 1,440 | 1,440 |
| 121 | 14.4 | Flush, test, and clean piping and fixtures |  | 2w | 2020-12-23 | 2021-01-07 | 102, 119, 120 | 2020-12-16 | 2020-12-31 | 2w | 10d | 0d | Plumbing Contractor | 80h | 960 | 960 |
| 122 | 14.5 | Plumbing works completed | milestone | 0d | 2021-01-07 | 2021-01-07 | 121 | 2020-12-31 | 2020-12-31 |  | 33d |  |  |  |  |  |
| 123 | 15 | **Electrical Works** |  | 139d | 2020-06-10 | 2020-12-23 |  | 2020-06-03 | 2020-12-16 | 139d | 43d |  |  | 656h | 7,872 | 7,872 |
| 124 | 15.1 | Rough-in electrical in masonry walls |  | 4w | 2020-06-10 | 2020-07-07 | 78, 15 | 2020-06-03 | 2020-06-30 | 4w | 99d | 74d | Electric Contractor | 160h | 1,920 | 1,920 |
| 125 | 15.2 | Rough-in electrical in drywall walls |  | 4w | 2020-09-29 | 2020-10-28 | 96 | 2020-09-22 | 2020-10-21 | 4w | 35d | 10d | Electric Contractor | 160h | 1,920 | 1,920 |
| 126 | 15.3 | Pull wire in conduit and set area transformers |  | 3w | 2020-10-21 | 2020-11-11 | 124, 103 | 2020-10-14 | 2020-11-04 | 3w | 25d | 0d | Electric Contractor | 120h | 1,440 | 1,440 |
| 127 | 15.4 | Install and terminate electrical devices |  | 3w | 2020-11-11 | 2020-12-02 | 126, 125 | 2020-11-04 | 2020-11-25 | 3w | 25d | 5d | Electric Contractor | 120h | 1,440 | 1,440 |
| 128 | 15.5 | Make electrical terminations for HVAC equipment |  | 2d | 2020-11-11 | 2020-11-13 | 126, 94 | 2020-11-04 | 2020-11-06 | 2d | 51d | 18d | Electric Contractor | 16h | 192 | 192 |
| 129 | 15.6 | Install light fixtures - test and clean |  | 2w | 2020-12-09 | 2020-12-23 | 105, 127 | 2020-12-02 | 2020-12-16 | 2w | 20d | 0d | Electric Contractor | 80h | 960 | 960 |
| 130 | 15.7 | Electrical works completed | milestone | 0d | 2020-12-23 | 2020-12-23 | 129 | 2020-12-16 | 2020-12-16 |  | 43d |  |  |  |  |  |
| 131 | 16 | **Heating and Ventilating - AC** |  | 180d | 2020-04-28 | 2021-01-07 |  | 2020-04-21 | 2020-12-31 | 180d | 33d |  |  | 600h | 7,200 | 7,200 |
| 132 | 16.1 | Set equipment in mechanical room |  | 2w | 2020-04-28 | 2020-05-11 | 83, 16 | 2020-04-21 | 2020-05-04 | 2w | 168d | 100d | HVAC Contractor | 80h | 960 | 960 |
| 133 | 16.2 | Rough-in mechanical in masonry walls |  | 4w | 2020-06-10 | 2020-07-07 | 78 | 2020-06-03 | 2020-06-30 | 4w | 127d | 59d | HVAC Contractor | 160h | 1,920 | 1,920 |
| 134 | 16.3 | Rough-in mechanical in drywall walls |  | 2w | 2020-09-29 | 2020-10-14 | 96 | 2020-09-22 | 2020-10-07 | 2w | 93d |  | HVAC Contractor | 80h | 960 | 960 |
| 135 | 16.4 | Install duct in building chase |  | 3w | 2020-09-29 | 2020-10-21 | 132, 133, 96 | 2020-09-22 | 2020-10-14 | 3w | 68d | 35d | HVAC Contractor | 120h | 1,440 | 1,440 |
| 136 | 16.5 | Set HVAC trim and test and balance system |  | 4w | 2020-12-09 | 2021-01-07 | 105, 135, 128 | 2020-12-02 | 2020-12-31 | 4w | 33d |  | HVAC Contractor | 160h | 1,920 | 1,920 |

| ID | WBS | Task | Type | Duration | Start | Finish | Predecessors | Baseline start | Baseline finish | Baseline duration | Total slack | Free slack | Resources | Work | Cost | Baseline cost |
| --- | --- | --- | --- | --- | --- | --- | --- | --- | --- | --- | --- | --- | --- | --- | --- | --- |
| 137 | 17 | **Final Clean-up and Occupancy** |  | 60d | 2020-11-04 | 2021-01-28 |  | 2020-10-28 | 2021-01-21 | 60d | 18d |  |  | 96h | 1,376 | 1,376 |
| 138 | 17.1 | Install hard tile flooring in common areas |  | 1w | 2020-11-04 | 2020-11-11 | 97 | 2020-10-28 | 2020-11-04 | 1w | 46d | 0d | Tile Contractor | 40h | 480 | 480 |
| 139 | 17.2 | Clean hard tile floors |  | 4d | 2020-11-11 | 2020-11-17 | 138 | 2020-11-04 | 2020-11-10 | 4d | 46d |  | Tile Contractor [50%] | 16h | 192 | 192 |
| 140 | 17.3 | Remove debris from building and do final clean-up |  | 4d | 2021-01-21 | 2021-01-27 | 108, 107, 109, 110, 121, 129, 106, 139 | 2021-01-14 | 2021-01-20 | 4d | 0d |  | Labor Unit | 32h | 384 | 384 |
| 141 | 17.4 | Substantial completion date |  | 1d | 2021-01-27 | 2021-01-28 | 140 | 2021-01-20 | 2021-01-21 | 1d | 18d | 0d | Superintendent | 8h | 320 | 320 |
| 142 | 17.5 | Ready for Occupancy | milestone | 0d | 2021-01-28 | 2021-01-28 | 141 | 2021-01-21 | 2021-01-21 |  | 18d |  |  |  |  |  |
| 143 | 18 | **Complete Final Inspections** |  | 6d | 2021-01-27 | 2021-02-04 |  | 2021-01-20 | 2021-01-28 | 6d | 0d |  |  | 48h | 1,848 | 1,848 |
| 144 | 18.1 | Complete elevator inspection and certification |  | 3d | 2021-01-27 | 2021-02-01 | 140, 116 | 2021-01-20 | 2021-01-25 | 3d | 0d |  | Elevator Contractor | 24h | 288 | 288 |
| 145 | 18.2 | Perform architect's inspection |  | 1d | 2021-02-01 | 2021-02-02 | 140, 111, 144 | 2021-01-25 | 2021-01-26 | 1d | 0d |  | Superintendent [50%]; Project Management [50%] | 8h | 520 | 520 |
| 146 | 18.3 | Perform local building agency inspection |  | 1d | 2021-02-02 | 2021-02-03 | 145 | 2021-01-26 | 2021-01-27 | 1d | 0d |  | Project Management [50%]; Superintendent [50%] | 8h | 520 | 520 |
| 147 | 18.4 | Perform Fire Marshal's inspection |  | 1d | 2021-02-03 | 2021-02-04 | 146 | 2021-01-27 | 2021-01-28 | 1d | 0d |  | Superintendent [50%]; Project Management [50%] | 8h | 520 | 520 |
| 148 | 18.5 | Final inspection completed | milestone | 0d | 2021-02-04 | 2021-02-04 | 147 | 2021-01-28 | 2021-01-28 |  | 13d |  |  |  |  |  |
| 149 | 19 | **Project Closure** |  | 13d | 2021-02-04 | 2021-02-23 |  | 2021-01-28 | 2021-02-16 | 13d | 0d |  |  | 111.12h | 3,937.6 | 3,937.6 |
| 150 | 19.1 | Complete punch list items from all inspections |  | 2w | 2021-02-04 | 2021-02-18 | 147 | 2021-01-28 | 2021-02-11 | 2w | 0d |  | Superintendent [11%]; Labor Unit [11%]; Plumbing Contractor [11%]; Electric Contractor [11%]; HVAC Contractor [11%]; Drywall Contractor [11%]; Carpet Contractor [11%]; Paving Contractor [11%]; Painting Contractor [11%] | 79.2h | 1,196.8 | 1,196.8 |
| 151 | 19.2 | Obtain certificate of occupancy |  | 2d | 2021-02-18 | 2021-02-22 | 150 | 2021-02-11 | 2021-02-15 | 2d | 0d |  | Project Management | 16h | 1,440 | 1,440 |
| 152 | 19.3 | Issue final completion documents including warranties |  | 1d | 2021-02-18 | 2021-02-19 | 150 | 2021-02-11 | 2021-02-12 | 1d | 1d |  | Project Management | 8h | 720 | 720 |
| 153 | 19.4 | Issue final request for payment |  | 1d | 2021-02-22 | 2021-02-23 | 151, 152 | 2021-02-15 | 2021-02-16 | 1d | 0d |  | Project Management [33%]; Accounting [33%]; General Manager [33%] | 7.92h | 580.8 | 580.8 |
| 154 | 19.5 | Payments cleared & Project completed successfully | milestone | 0d | 2021-02-23 | 2021-02-23 | 153 | 2021-02-16 | 2021-02-16 |  | 0d |  |  |  |  |  |
