# Commercial Office Space Construction

Schedule from MS Project, 2017-08-20 to 2021-02-11.

## Calendars

- Standard: Mon-Fri 08:00-12:00, 13:00-17:00; Sat-Sun off.

## Schedule

| ID | WBS | Task | Duration | Start | Finish | Predecessors | Total slack | Free slack | Constraint |
| --- | --- | --- | --- | --- | --- | --- | --- | --- | --- |
| 1 | 1 | **General Conditions** | 23d | 2019-10-21 | 2019-11-20 |  | 321d |  |  |
| 2 | 1.1 | Receiving notice to proceed and sign contract | 3d | 2019-10-21 | 2019-10-23 |  | 321d | 0d | start no earlier than 2019-10-21 |
| 3 | 1.2 | Submitting bond and insurance documents | 2d | 2019-10-24 | 2019-10-25 | 2 | 321d | 0d | start no earlier than 2019-10-24 |
| 4 | 1.3 | Preparing and submitting project schedule | 2d | 2019-10-28 | 2019-10-29 | 3 | 321d | 0d | start no earlier than 2019-10-28 |
| 5 | 1.4 | Preparing and submitting schedule of values | 2d | 2019-10-30 | 2019-10-31 | 4 | 321d | 0d | start no earlier than 2019-10-30 |
| 6 | 1.5 | Obtaining building permits | 4d | 2019-11-01 | 2019-11-06 | 5 | 321d | 0d | start no earlier than 2019-11-01 |
| 7 | 1.6 | Submitting preliminary shop drawings | 2w | 2019-11-07 | 2019-11-20 | 6 | 321d |  | start no earlier than 2019-11-07 |
| 8 | 1.7 | Submitting monthly requests for payment | 1d | 2019-10-24 | 2019-10-24 | 2 | 330d | 0d | start no earlier than 2019-10-24 |
| 9 | 2 | **Long Lead Procurement** | 70d | 2019-10-25 | 2020-01-30 |  | 270d |  |  |
| 10 | 2.1 | Submit shop drawings and order long lead items - steel | 2w | 2019-10-25 | 2019-11-07 | 8 | 330d |  | start no earlier than 2019-10-25 |
| 11 | 2.2 | Submit shop drawings and order long lead items - roofing | 2w | 2019-11-21 | 2019-12-04 |  | 311d |  | start no earlier than 2019-11-21 |
| 12 | 2.3 | Submit shop drawings and order long lead items - elevator | 2w | 2019-11-21 | 2019-12-04 |  | 311d |  | start no earlier than 2019-11-21 |
| 13 | 2.4 | Submit shop drawings and order long lead items - plumbing | 2w | 2019-11-21 | 2019-12-04 |  | 311d |  | start no earlier than 2019-11-21 |
| 14 | 2.5 | Submit shop drawings and order long lead items - electric | 2w | 2019-11-21 | 2019-12-04 |  | 311d |  | start no earlier than 2019-11-21 |
| 15 | 2.6 | Submit shop drawings and order long lead items - HVAC | 2w | 2019-11-21 | 2019-12-04 |  | 311d |  | start no earlier than 2019-11-21 |
| 16 | 2.7 | Detail, fabricate and deliver steel | 12w | 2019-11-08 | 2020-01-30 |  | 270d |  | start no earlier than 2019-11-08 |
| 17 | 3 | **Mobilize on Site** | 10d | 2019-10-24 | 2019-11-06 |  | 331d |  |  |
| 18 | 3.1 | Install temporary power | 2d | 2019-10-24 | 2019-10-25 |  | 339d |  | start no earlier than 2019-10-24 |
| 19 | 3.2 | Install temporary water service | 2d | 2019-10-24 | 2019-10-25 |  | 339d |  | start no earlier than 2019-10-24 |
| 20 | 3.3 | Set up site office | 3d | 2019-10-28 | 2019-10-30 |  | 336d |  | start no earlier than 2019-10-28 |
| 21 | 3.4 | Set line and grade benchmarks | 3d | 2019-10-31 | 2019-11-04 |  | 333d |  | start no earlier than 2019-10-31 |
| 22 | 3.5 | Prepare site - lay down yard and temporary fencing | 2d | 2019-11-05 | 2019-11-06 |  | 331d |  | start no earlier than 2019-11-05 |
| 23 | 4 | **Site Grading and Utilities** | 35d | 2019-11-07 | 2019-12-25 |  | 296d |  |  |
| 24 | 4.1 | Clear and grub site | 3d | 2019-11-07 | 2019-11-11 |  | 328d |  | start no earlier than 2019-11-07 |
| 25 | 4.2 | Stone site access and temporary parking area | 2d | 2019-11-12 | 2019-11-13 |  | 326d |  | start no earlier than 2019-11-12 |
| 26 | 4.3 | Rough grade site (cut and fill) | 1w | 2019-11-14 | 2019-11-20 |  | 321d |  | start no earlier than 2019-11-14 |
| 27 | 4.4 | Install storm drainage | 2w | 2019-11-21 | 2019-12-04 |  | 311d |  | start no earlier than 2019-11-21 |
| 28 | 4.5 | Install exterior fire line and building fire riser | 2w | 2019-11-21 | 2019-12-04 |  | 311d |  | start no earlier than 2019-11-21 |
| 29 | 4.6 | Perform final site grading | 2w | 2019-12-05 | 2019-12-18 |  | 301d |  | start no earlier than 2019-12-05 |
| 30 | 4.7 | Erect building batter boards and layout building | 1w | 2019-12-19 | 2019-12-25 |  | 296d |  | start no earlier than 2019-12-19 |

| ID | WBS | Task | Duration | Start | Finish | Total slack | Constraint |
| --- | --- | --- | --- | --- | --- | --- | --- |
| 31 | 5 | **Foundations** | 33d | 2019-12-26 | 2020-02-10 | 263d |  |
| 32 | 5.1 | Excavate foundations | 2w | 2019-12-26 | 2020-01-08 | 286d | start no earlier than 2019-12-26 |
| 33 | 5.2 | Excavate elevator pit | 2d | 2019-12-26 | 2019-12-27 | 294d | start no earlier than 2019-12-26 |
| 34 | 5.3 | Form column piers and spread foundations | 4d | 2020-01-09 | 2020-01-14 | 282d | start no earlier than 2020-01-09 |
| 35 | 5.4 | Rough-in electric and plumbing in elevator | 4d | 2019-12-30 | 2020-01-02 | 290d | start no earlier than 2019-12-30 |
| 36 | 5.5 | Form elevator pit walls | 4d | 2020-01-03 | 2020-01-08 | 286d | start no earlier than 2020-01-03 |
| 37 | 5.6 | Set reinforcing and anchor bolts | 4d | 2020-01-15 | 2020-01-20 | 278d | start no earlier than 2020-01-15 |
| 38 | 5.7 | Pour column piers and foundations | 5d | 2020-01-21 | 2020-01-27 | 273d | start no earlier than 2020-01-21 |
| 39 | 5.8 | Pour concrete elevator walls | 1d | 2020-01-09 | 2020-01-09 | 285d | start no earlier than 2020-01-09 |
| 40 | 5.9 | Cure elevator wall concrete | 7d | 2020-01-10 | 2020-01-20 | 278d | start no earlier than 2020-01-10 |
| 41 | 5.10 | Cure piers and foundations | 7d | 2020-01-28 | 2020-02-05 | 266d | start no earlier than 2020-01-28 |
| 42 | 5.11 | Strip wall forms | 1d | 2020-01-21 | 2020-01-21 | 277d | start no earlier than 2020-01-21 |
| 43 | 5.12 | Strip column piers and foundation forms | 3d | 2020-02-06 | 2020-02-10 | 263d | start no earlier than 2020-02-06 |
| 44 | 5.13 | Install pneumatic tube in elevator pit | 3d | 2020-01-22 | 2020-01-24 | 274d | start no earlier than 2020-01-22 |
| 45 | 5.14 | Prepare and pour concrete floor in elevator pit | 1d | 2020-01-27 | 2020-01-27 | 273d | start no earlier than 2020-01-27 |
| 46 | 6 | **Steel Erection** | 45d | 2020-02-11 | 2020-04-13 | 218d |  |
| 47 | 6.1 | Erect steel columns, beams and joist - 1st and 2nd floors | 2w | 2020-02-11 | 2020-02-24 | 253d | start no earlier than 2020-02-11 |
| 48 | 6.2 | Erect steel columns, beams and joist - 3rd floor and roof | 2w | 2020-02-25 | 2020-03-09 | 243d | start no earlier than 2020-02-25 |
| 49 | 6.3 | Install miscellaneous iron and bracing - 1st and 2nd floors | 2w | 2020-02-25 | 2020-03-09 | 243d | start no earlier than 2020-02-25 |
| 50 | 6.4 | Install miscellaneous iron and bracing - 3rd floor and roof | 2w | 2020-03-10 | 2020-03-23 | 233d | start no earlier than 2020-03-10 |
| 51 | 6.5 | Install stairs and miscellaneous iron railing | 2w | 2020-03-24 | 2020-04-06 | 223d | start no earlier than 2020-03-24 |
| 52 | 6.6 | Touch-up paint on steel | 1w | 2020-04-07 | 2020-04-13 | 218d | start no earlier than 2020-04-07 |
| 53 | 7 | **Form and Pour Concrete - Floors and Roof** | 85d | 2020-02-25 | 2020-06-22 | 168d |  |
| 54 | 7.1 | Form 2nd floor including all floor openings | 5d | 2020-04-14 | 2020-04-20 | 213d | start no earlier than 2020-04-14 |
| 55 | 7.2 | Install rebar and in-floor utilities (including mechanical, electrical, plumbing) | 5d | 2020-02-25 | 2020-03-02 | 248d | start no earlier than 2020-02-25 |
| 56 | 7.3 | Pour 2nd floor slab | 4d | 2020-04-21 | 2020-04-24 | 209d | start no earlier than 2020-04-21 |
| 57 | 7.4 | Cure 2nd floor slab | 7d | 2020-04-27 | 2020-05-05 | 202d | start no earlier than 2020-04-27 |
| 58 | 7.5 | Strip forms from 2nd floor slab | 2d | 2020-05-06 | 2020-05-07 | 200d | start no earlier than 2020-05-06 |
| 59 | 7.6 | Form 3rd floor including all floor openings | 5d | 2020-05-06 | 2020-05-12 | 197d | start no earlier than 2020-05-06 |
| 60 | 7.7 | Install rebar and in-floor utilities (including mechanical, electrical, plumbing) | 5d | 2020-05-06 | 2020-05-12 | 197d | start no earlier than 2020-05-06 |
| 61 | 7.8 | Pour 3rd floor slab | 4d | 2020-05-13 | 2020-05-18 | 193d | start no earlier than 2020-05-13 |
| 62 | 7.9 | Cure 3rd floor slab | 7d | 2020-05-19 | 2020-05-27 | 186d | start no earlier than 2020-05-19 |
| 63 | 7.10 | Strip forms from 3rd floor slab | 2d | 2020-05-28 | 2020-05-29 | 184d | start no earlier than 2020-05-28 |
| 64 | 7.11 | Form roof slab including all floor openings | 5d | 2020-05-28 | 2020-06-03 | 181d | start no earlier than 2020-05-28 |
| 65 | 7.12 | Install rebar and in-floor utilities (including mechanical, electrical, plumbing) | 5d | 2020-05-28 | 2020-06-03 | 181d | start no earlier than 2020-05-28 |
| 66 | 7.13 | Pour roof slab | 4d | 2020-06-04 | 2020-06-09 | 177d | start no earlier than 2020-06-04 |
| 67 | 7.14 | Cure roof slab | 7d | 2020-06-10 | 2020-06-18 | 170d | start no earlier than 2020-06-10 |
| 68 | 7.15 | Strip forms from roof slab | 2d | 2020-06-19 | 2020-06-22 | 168d | start no earlier than 2020-06-19 |
| 69 | 7.16 | Form 1st floor | 4d | 2020-05-08 | 2020-05-13 | 196d | start no earlier than 2020-05-08 |
| 70 | 7.17 | Install electrical underground | 1w | 2020-05-08 | 2020-05-14 | 195d | start no earlier than 2020-05-08 |
| 71 | 7.18 | Install plumbing underground | 1w | 2020-05-08 | 2020-05-14 | 195d | start no earlier than 2020-05-08 |
| 72 | 7.19 | Install rebar and in-floor utilities | 4d | 2020-05-08 | 2020-05-13 | 196d | start no earlier than 2020-05-08 |
| 73 | 7.20 | Pour 1st floor slab | 4d | 2020-05-15 | 2020-05-20 | 191d | start no earlier than 2020-05-15 |
| 74 | 7.21 | Cure 1st floor slab | 7d | 2020-05-21 | 2020-05-29 | 184d | start no earlier than 2020-05-21 |
| 75 | 7.22 | Strip forms from 1st floor slab | 2d | 2020-06-01 | 2020-06-02 | 182d | start no earlier than 2020-06-01 |

| ID | WBS | Task | Type | Duration | Start | Finish | Total slack | Constraint |
| --- | --- | --- | --- | --- | --- | --- | --- | --- |
| 76 | 8 | **Carpentry Work** |  | 15d | 2020-06-23 | 2020-07-13 | 153d |  |
| 77 | 8.1 | Install exterior sheathing and metal studs |  | 3w | 2020-06-23 | 2020-07-13 | 153d | start no earlier than 2020-06-23 |
| 78 | 9 | **Masonry Work** |  | 110d | 2020-03-24 | 2020-08-24 | 123d |  |
| 79 | 9.1 | Rough-in plumbing at toilets and masonry walls |  | 4w | 2020-06-03 | 2020-06-30 | 162d | start no earlier than 2020-06-03 |
| 80 | 9.2 | Lay masonry at core, mechanical, and toilets |  | 4w | 2020-03-24 | 2020-04-20 | 213d | start no earlier than 2020-03-24 |
| 81 | 9.3 | Install exterior masonry work |  | 5w | 2020-07-14 | 2020-08-17 | 128d | start no earlier than 2020-07-14 |
| 82 | 9.4 | Install roof drains |  | 2d | 2020-08-18 | 2020-08-19 | 126d | start no earlier than 2020-08-18 |
| 83 | 9.5 | Install tile in toilet rooms |  | 2w | 2020-07-01 | 2020-07-14 | 152d | start no earlier than 2020-07-01 |
| 84 | 9.6 | Clean masonry |  | 1w | 2020-08-18 | 2020-08-24 | 123d | start no earlier than 2020-08-18 |
| 85 | 9.7 | Clean toilet room tile |  | 1w | 2020-07-15 | 2020-07-21 | 147d | start no earlier than 2020-07-15 |
| 86 | 10 | **Roofing** |  | 810d | 2017-08-20 | 2020-09-25 | 0d |  |
| 87 | 10.1 | Install flashing at parapet walls | manual | 4d | 2017-08-20 | 2017-08-23 |  |  |
| 88 | 10.2 | Pour lightweight concrete roof fill |  | 2d | 2020-08-20 | 2020-08-21 | 124d | start no earlier than 2020-08-20 |
| 89 | 10.3 | Install seamless roofing material |  | 5d | 2020-08-31 | 2020-09-04 | 114d | start no earlier than 2020-08-31 |
| 90 | 10.4 | Spread stone ballast on seamless roof |  | 5d | 2020-09-07 | 2020-09-11 | 109d | start no earlier than 2020-09-07 |
| 91 | 10.5 | Set rooftop equipment |  | 2w | 2020-09-14 | 2020-09-25 | 99d | start no earlier than 2020-09-14 |
| 92 | 11 | **Window wall and store front closures** |  | 60d | 2020-08-18 | 2020-11-09 | 68d |  |
| 93 | 11.1 | Install window wall aluminum and glass |  | 5w | 2020-08-18 | 2020-09-21 | 103d | start no earlier than 2020-08-18 |
| 94 | 11.2 | Install interior stud walls and drywall |  | 5w | 2020-09-22 | 2020-10-26 | 78d | start no earlier than 2020-09-22 |
| 95 | 11.3 | Install interior doors and hardware |  | 2w | 2020-10-27 | 2020-11-09 | 68d | start no earlier than 2020-10-27 |
| 96 | 11.4 | Install store front doors and hardware |  | 3w | 2020-08-18 | 2020-09-07 | 113d | start no earlier than 2020-08-18 |
| 97 | 12 | **Building Finishes** |  | 80d | 2020-09-22 | 2021-01-11 | 23d |  |
| 98 | 12.1 | Install millwork and wood trim |  | 3w | 2020-10-27 | 2020-11-16 | 63d | start no earlier than 2020-10-27 |
| 99 | 12.2 | Paint walls and woodwork |  | 4w | 2020-11-17 | 2020-12-14 | 43d | start no earlier than 2020-11-17 |
| 100 | 12.3 | Install conduit at ceiling plenum space |  | 3w | 2020-09-22 | 2020-10-12 | 88d | start no earlier than 2020-09-22 |
| 101 | 12.4 | Install duct in ceiling plenum space |  | 3w | 2020-10-27 | 2020-11-16 | 63d | start no earlier than 2020-10-27 |
| 102 | 12.5 | Install ceiling grid |  | 2w | 2020-11-17 | 2020-11-30 | 53d | start no earlier than 2020-11-17 |
| 103 | 12.6 | Install ceiling tile |  | 2w | 2020-12-01 | 2020-12-14 | 43d | start no earlier than 2020-12-01 |
| 104 | 12.7 | Hang wallpaper |  | 2w | 2020-12-01 | 2020-12-14 | 43d | start no earlier than 2020-12-01 |
| 105 | 12.8 | Install building carpet |  | 4w | 2020-12-15 | 2021-01-11 | 23d | start no earlier than 2020-12-15 |
| 106 | 12.9 | Install hardware and accessories |  | 3w | 2020-12-15 | 2021-01-04 | 28d | start no earlier than 2020-12-15 |
| 107 | 12.10 | Complete interior and exterior sod and plantings |  | 2w | 2020-12-15 | 2020-12-28 | 33d | start no earlier than 2020-12-15 |
| 108 | 12.11 | Pave, curb, and stripe parking lot |  | 2w | 2020-12-29 | 2021-01-11 | 23d | start no earlier than 2020-12-29 |

| ID | WBS | Task | Duration | Start | Finish | Total slack | Constraint |
| --- | --- | --- | --- | --- | --- | --- | --- |
| 109 | 13 | **Elevators** | 40d | 2020-04-21 | 2020-06-15 | 173d |  |
| 110 | 13.1 | Set elevator equipment in shafts | 4w | 2020-04-21 | 2020-05-18 | 193d | start no earlier than 2020-04-21 |
| 111 | 13.2 | Set equipment in mechanical room | 2w | 2020-05-19 | 2020-06-01 | 183d | start no earlier than 2020-05-19 |
| 112 | 13.3 | Test and align doors and equipment | 2w | 2020-06-02 | 2020-06-15 | 173d | start no earlier than 2020-06-02 |
| 113 | 14 | **Plumbing** | 90d | 2020-08-25 | 2020-12-28 | 33d |  |
| 114 | 14.1 | Rough-in plumbing in drywall walls | 4w | 2020-09-22 | 2020-10-19 | 83d | start no earlier than 2020-09-22 |
| 115 | 14.2 | Tie-in fire line riser and set valves | 2w | 2020-08-25 | 2020-09-07 | 113d | start no earlier than 2020-08-25 |
| 116 | 14.3 | Set plumbing fixtures and trim | 3w | 2020-10-20 | 2020-11-09 | 68d | start no earlier than 2020-10-20 |
| 117 | 14.4 | Flush, test, and clean piping and fixtures | 2w | 2020-12-15 | 2020-12-28 | 33d | start no earlier than 2020-12-15 |
| 118 | 15 | **Electrical** | 139d | 2020-06-03 | 2020-12-14 | 43d |  |
| 119 | 15.1 | Rough-in electrical in masonry walls | 4w | 2020-06-03 | 2020-06-30 | 162d | start no earlier than 2020-06-03 |
| 120 | 15.2 | Rough-in electrical in drywall walls | 4w | 2020-09-22 | 2020-10-19 | 83d | start no earlier than 2020-09-22 |
| 121 | 15.3 | Pull wire in conduit and set area transformers | 3w | 2020-10-13 | 2020-11-02 | 73d | start no earlier than 2020-10-13 |
| 122 | 15.4 | Install and terminate electrical devices | 3w | 2020-11-03 | 2020-11-23 | 58d | start no earlier than 2020-11-03 |
| 123 | 15.5 | Make electrical terminations for HVAC equipment | 2d | 2020-11-03 | 2020-11-04 | 71d | start no earlier than 2020-11-03 |
| 124 | 15.6 | Install light fixtures - test and clean | 2w | 2020-12-01 | 2020-12-14 | 43d | start no earlier than 2020-12-01 |
| 125 | 16 | **Heating and Ventilating - AC** | 180d | 2020-04-21 | 2020-12-28 | 33d |  |
| 126 | 16.1 | Set equipment in mechanical room | 2w | 2020-04-21 | 2020-05-04 | 203d | start no earlier than 2020-04-21 |
| 127 | 16.2 | Rough-in mechanical in masonry walls | 4w | 2020-06-03 | 2020-06-30 | 162d | start no earlier than 2020-06-03 |
| 128 | 16.3 | Rough-in mechanical in drywall walls | 2w | 2020-09-22 | 2020-10-05 | 93d | start no earlier than 2020-09-22 |
| 129 | 16.4 | Install duct in building chase | 3w | 2020-09-22 | 2020-10-12 | 88d | start no earlier than 2020-09-22 |
| 130 | 16.5 | Set HVAC trim and test and balance system | 4w | 2020-12-01 | 2020-12-28 | 33d | start no earlier than 2020-12-01 |
| 131 | 17 | **Final Clean-up and Occupancy** | 60d | 2020-10-27 | 2021-01-18 | 18d |  |
| 132 | 17.1 | Install hard tile flooring in common areas | 1w | 2020-10-27 | 2020-11-02 | 73d | start no earlier than 2020-10-27 |
| 133 | 17.2 | Clean hard tile floors | 4d | 2020-11-03 | 2020-11-06 | 69d | start no earlier than 2020-11-03 |
| 134 | 17.3 | Remove debris from building and do final clean-up | 4d | 2021-01-12 | 2021-01-15 | 19d | start no earlier than 2021-01-12 |
| 135 | 17.4 | Substantial completion date | 1d | 2021-01-18 | 2021-01-18 | 18d | start no earlier than 2021-01-18 |

| ID | WBS | Task | Duration | Start | Finish | Total slack | Constraint |
| --- | --- | --- | --- | --- | --- | --- | --- |
| 136 | 18 | **Complete Final Inspections** | 6d | 2021-01-18 | 2021-01-25 | 13d |  |
| 137 | 18.1 | Complete elevator inspection and certification | 3d | 2021-01-18 | 2021-01-20 | 16d | start no earlier than 2021-01-18 |
| 138 | 18.2 | Perform architect's inspection | 1d | 2021-01-21 | 2021-01-21 | 15d | start no earlier than 2021-01-21 |
| 139 | 18.3 | Perform local building agency inspection | 1d | 2021-01-22 | 2021-01-22 | 14d | start no earlier than 2021-01-22 |
| 140 | 18.4 | Perform Fire Marshal's inspection | 1d | 2021-01-25 | 2021-01-25 | 13d | start no earlier than 2021-01-25 |
| 141 | 19 | **Project Closure** | 13d | 2021-01-26 | 2021-02-11 | 0d |  |
| 142 | 19.1 | Complete punch list items from all inspections | 2w | 2021-01-26 | 2021-02-08 | 3d | start no earlier than 2021-01-26 |
| 143 | 19.2 | Obtain certificate of occupancy | 2d | 2021-02-09 | 2021-02-10 | 1d | start no earlier than 2021-02-09 |
| 144 | 19.3 | Issue final completion documents including warranties | 1d | 2021-02-09 | 2021-02-09 | 2d | start no earlier than 2021-02-09 |
| 145 | 19.4 | Issue final request for payment | 1d | 2021-02-11 | 2021-02-11 | 0d | start no earlier than 2021-02-11 |
