# Commercial Office Space Construction

Schedule from MS Project, 2017-08-20 to 2021-02-11.

## Calendars

- Standard: Mon-Fri 08:00-12:00, 13:00-17:00; Sat-Sun off.

## Schedule

| ID | WBS | Task | Duration | Start | Finish | Predecessors | Total slack | Free slack | Constraint |
| --- | --- | --- | --- | --- | --- | --- | --- | --- | --- |
| 1 | 1 | **General Conditions** | 24d | 2019-10-21 | 2019-11-21 |  | 0d |  |  |
| 2 | 1.1 | Receiving notice to proceed and sign contract | 3d | 2019-10-21 | 2019-10-23 |  | -5d | 0d | start no earlier than 2019-10-21 |
| 3 | 1.2 | Submitting bond and insurance documents | 2d | 2019-10-24 | 2019-10-25 | 2 | 0d |  |  |
| 4 | 1.3 | Preparing and submitting project schedule | 2d | 2019-10-28 | 2019-10-29 | 3 | 0d |  |  |
| 5 | 1.4 | Preparing and submitting schedule of values | 2d | 2019-10-30 | 2019-10-31 | 4 | 0d |  |  |
| 6 | 1.5 | Obtaining building permits | 4d | 2019-11-05 | 2019-11-08 | 5FS+2d | 0d |  | must finish on 2019-11-08 |
| 7 | 1.6 | Submitting preliminary shop drawings | 2w | 2019-11-08 | 2019-11-21 | 6FS-1d | 92d | 0d |  |
| 8 | 1.7 | Submitting monthly requests for payment | 1d | 2019-10-24 | 2019-10-24 | 2 | 7d | 0d |  |
| 9 | 2 | **Long Lead Procurement** | 70d | 2019-10-25 | 2020-01-30 |  | 7d |  |  |
| 10 | 2.1 | Submitting shop drawings and order long lead items - steel | 2w | 2019-10-25 | 2019-11-07 | 8 | 7d | 0d |  |
| 11 | 2.2 | Submitting shop drawings and order long lead items - roofing | 2w | 2019-11-22 | 2019-12-05 | 7 | 261d | 184d |  |
| 12 | 2.3 | Submitting shop drawings and order long lead items - elevator | 2w | 2019-11-22 | 2019-12-05 | 7 | 251d | 97d |  |
| 13 | 2.4 | Submitting shop drawings and order long lead items - plumbing | 2w | 2019-11-22 | 2019-12-05 | 7 | 92d |  |  |
| 14 | 2.5 | Submitting shop drawings and order long lead items - electric | 2w | 2019-11-22 | 2019-12-05 | 7 | 92d |  |  |
| 15 | 2.6 | Submitting shop drawings and order long lead items - HVAC | 2w | 2019-11-22 | 2019-12-05 | 7 | 92d |  |  |
| 16 | 2.7 | Detail, fabricate and deliver steel | 12w | 2019-11-08 | 2020-01-30 | 10 | 7d |  |  |
| 17 | 3 | **Mobilize on Site** | 10d | 2019-10-24 | 2019-11-06 |  | 0d |  |  |
| 18 | 3.1 | Install temporary power | 2d | 2019-10-24 | 2019-10-25 | 2 | 0d |  |  |
| 19 | 3.2 | Install temporary water service | 2d | 2019-10-24 | 2019-10-25 | 2 | 0d |  |  |
| 20 | 3.3 | Set up site office | 3d | 2019-10-28 | 2019-10-30 | 18, 19 | 0d |  |  |
| 21 | 3.4 | Set line and grade benchmarks | 3d | 2019-10-31 | 2019-11-04 | 20 | 0d |  |  |
| 22 | 3.5 | Prepare site - lay down yard and temporary fencing | 2d | 2019-11-05 | 2019-11-06 | 21 | 0d |  |  |
| 23 | 4 | **Site Grading and Utilities** | 35d | 2019-11-07 | 2019-12-25 |  | 0d |  |  |
| 24 | 4.1 | Clear and grub site | 3d | 2019-11-07 | 2019-11-11 | 20, 22 | 0d |  |  |
| 25 | 4.2 | Stone site access and temporary parking area | 2d | 2019-11-12 | 2019-11-13 | 24, 22 | 0d |  |  |
| 26 | 4.3 | Rough grade site (cut and fill) | 1w | 2019-11-14 | 2019-11-20 | 25 | 0d |  |  |
| 27 | 4.4 | Install storm drainage | 2w | 2019-11-21 | 2019-12-04 | 26 | 9d |  |  |
| 28 | 4.5 | Install exterior fire line and building fire riser | 2w | 2019-11-21 | 2019-12-04 | 26 | 0d |  |  |
| 29 | 4.6 | Perform final site grading | 2w | 2019-12-05 | 2019-12-18 | 27FF+1d, 28 | 0d |  |  |
| 30 | 4.7 | Erect building batter boards and layout building | 1w | 2019-12-19 | 2019-12-25 | 29 | 0d |  |  |

| ID | WBS | Task | Duration | Start | Finish | Predecessors | Total slack | Free slack |
| --- | --- | --- | --- | --- | --- | --- | --- | --- |
| 31 | 5 | **Excavation and Foundations** | 33d | 2019-12-26 | 2020-02-10 |  | 0d |  |
| 32 | 5.1 | Excavate foundations | 2w | 2019-12-26 | 2020-01-08 | 30 | 0d |  |
| 33 | 5.2 | Excavate elevator pit | 2d | 2019-12-26 | 2019-12-27 | 30 | 214d | 0d |
| 34 | 5.3 | Form column piers and spread foundations | 4d | 2020-01-09 | 2020-01-14 | 32 | 0d |  |
| 35 | 5.4 | Rough-in electric and plumbing in elevator | 4d | 2019-12-30 | 2020-01-02 | 33 | 214d | 0d |
| 36 | 5.5 | Form elevator pit walls | 4d | 2020-01-03 | 2020-01-08 | 35 | 214d | 0d |
| 37 | 5.6 | Set reinforcing and anchor bolts | 4d | 2020-01-15 | 2020-01-20 | 34 | 0d |  |
| 38 | 5.7 | Pour column piers and foundations | 5d | 2020-01-21 | 2020-01-27 | 37 | 0d |  |
| 39 | 5.8 | Pour concrete elevator walls | 1d | 2020-01-09 | 2020-01-09 | 36 | 214d | 0d |
| 40 | 5.9 | Cure elevator wall concrete | 7d | 2020-01-10 | 2020-01-20 | 39 | 214d | 0d |
| 41 | 5.10 | Cure piers and foundations | 7d | 2020-01-28 | 2020-02-05 | 38 | 0d |  |
| 42 | 5.11 | Strip wall forms | 1d | 2020-01-21 | 2020-01-21 | 40 | 214d | 0d |
| 43 | 5.12 | Strip column piers and foundation forms | 3d | 2020-02-06 | 2020-02-10 | 41 | 0d |  |
| 44 | 5.13 | Install pneumatic tube in elevator pit | 3d | 2020-01-22 | 2020-01-24 | 42 | 214d | 0d |
| 45 | 5.14 | Prepare and pour concrete floor in elevator pit | 1d | 2020-01-27 | 2020-01-27 | 44 | 214d | 60d |
| 46 | 6 | **Column Erection and Miscellaneous steel works** | 45d | 2020-02-11 | 2020-04-13 |  | 0d |  |
| 47 | 6.1 | Erect steel columns, beams and joint - 1st and 2nd floors | 2w | 2020-02-11 | 2020-02-24 | 43, 16 | 0d |  |
| 48 | 6.2 | Erect steel columns, beams and joint - 3rd floor and roof | 2w | 2020-02-25 | 2020-03-09 | 47 | 0d |  |
| 49 | 6.3 | Install miscellaneous iron and bracing - 1st and 2nd floors | 2w | 2020-02-25 | 2020-03-09 | 47 | 164d | 10d |
| 50 | 6.4 | Install miscellaneous iron and bracing - 3rd floor and roof | 2w | 2020-03-10 | 2020-03-23 | 48 | 0d |  |
| 51 | 6.5 | Install stairs and miscellaneous iron railing | 2w | 2020-03-24 | 2020-04-06 | 50 | 0d |  |
| 52 | 6.6 | Touch-up paint on steel | 1w | 2020-04-07 | 2020-04-13 | 51 | 0d |  |
| 53 | 7 | **Forming, Pouring, & Curing - Floors and Roof** | 85d | 2020-02-25 | 2020-06-22 |  | 35d |  |
| 54 | 7.1 | Form 2nd floor including all floor openings | 5d | 2020-04-14 | 2020-04-20 | 52, 13, 14, 15, 47 | 0d |  |
| 55 | 7.2 | Install rebar and in-floor utilities (including mechanical, electrical, plumbing) | 5d | 2020-02-25 | 2020-03-02 | 47 | 35d |  |
| 56 | 7.3 | Pour 2nd floor slab | 4d | 2020-04-21 | 2020-04-24 | 55, 54 | 0d |  |
| 57 | 7.4 | Cure 2nd floor slab | 7d | 2020-04-27 | 2020-05-05 | 56 | 0d |  |
| 58 | 7.5 | Strip forms from 2nd floor slab | 2d | 2020-05-06 | 2020-05-07 | 57 | 99d | 0d |
| 59 | 7.6 | Form 3rd floor including all floor openings | 5d | 2020-05-06 | 2020-05-12 | 57 | 0d |  |
| 60 | 7.7 | Install rebar and in-floor utilities (including mechanical, electrical, plumbing) | 5d | 2020-05-06 | 2020-05-12 | 57 | 0d |  |
| 61 | 7.8 | Pour 3rd floor slab | 4d | 2020-05-13 | 2020-05-18 | 60, 59 | 0d |  |
| 62 | 7.9 | Cure 3rd floor slab | 7d | 2020-05-19 | 2020-05-27 | 61 | 0d |  |
| 63 | 7.10 | Strip forms from 3rd floor slab | 2d | 2020-05-28 | 2020-05-29 | 62 | 16d |  |
| 64 | 7.11 | Form roof slab including all floor openings | 5d | 2020-05-28 | 2020-06-03 | 62 | 0d |  |
| 65 | 7.12 | Install rebar and in-floor utilities (including mechanical, electrical, plumbing) | 5d | 2020-05-28 | 2020-06-03 | 62 | 0d |  |
| 66 | 7.13 | Pour roof slab | 4d | 2020-06-04 | 2020-06-09 | 65, 64 | 0d |  |
| 67 | 7.14 | Cure roof slab | 7d | 2020-06-10 | 2020-06-18 | 66 | 0d |  |
| 68 | 7.15 | Strip forms from roof slab | 2d | 2020-06-19 | 2020-06-22 | 67 | 0d |  |
| 69 | 7.16 | Form 1st floor | 4d | 2020-05-08 | 2020-05-13 | 58 | 100d | 1d |
| 70 | 7.17 | Install electrical underground | 1w | 2020-05-08 | 2020-05-14 | 58 | 99d | 0d |
| 71 | 7.18 | Install plumbing underground | 1w | 2020-05-08 | 2020-05-14 | 58 | 99d | 0d |
| 72 | 7.19 | Install rebar and in-floor utilities | 4d | 2020-05-08 | 2020-05-13 | 58 | 100d | 1d |
| 73 | 7.20 | Pour 1st floor slab | 4d | 2020-05-15 | 2020-05-20 | 69, 72, 70, 71 | 99d | 0d |
| 74 | 7.21 | Cure 1st floor slab | 7d | 2020-05-21 | 2020-05-29 | 73 | 99d | 0d |
| 75 | 7.22 | Strip forms from 1st floor slab | 2d | 2020-06-01 | 2020-06-02 | 74 | 99d | 0d |

| ID | WBS | Task | Type | Duration | Start | Finish | Predecessors | Total slack | Free slack |
| --- | --- | --- | --- | --- | --- | --- | --- | --- | --- |
| 76 | 8 | **Carpentry Work** |  | 15d | 2020-06-23 | 2020-07-13 |  | 0d |  |
| 77 | 8.1 | Install exterior sheathing and metal studs |  | 3w | 2020-06-23 | 2020-07-13 | 63, 68 | 0d |  |
| 78 | 9 | **Masonry Work** |  | 110d | 2020-03-24 | 2020-08-24 |  | 80d |  |
| 79 | 9.1 | Rough-in plumbing at toilets and masonry walls |  | 4w | 2020-06-03 | 2020-06-30 | 75, 13 | 99d | 0d |
| 80 | 9.2 | Lay masonry at core, mechanical, and toilets |  | 4w | 2020-03-24 | 2020-04-20 | 49, 50 | 154d | 0d |
| 81 | 9.3 | Install exterior masonry work |  | 5w | 2020-07-14 | 2020-08-17 | 77 | 0d |  |
| 82 | 9.4 | Install roof drains |  | 2d | 2020-08-18 | 2020-08-19 | 81 | 73d | 0d |
| 83 | 9.5 | Install tile in toilet rooms |  | 2w | 2020-07-01 | 2020-07-14 | 79 | 99d | 0d |
| 84 | 9.6 | Clean masonry |  | 1w | 2020-08-18 | 2020-08-24 | 81 | 80d | 0d |
| 85 | 9.7 | Clean toilet room tile |  | 1w | 2020-07-15 | 2020-07-21 | 83 | 99d | 64d |
| 86 | 10 | **Roofing** |  | 810d | 2017-08-20 | 2020-09-25 |  | 0d |  |
| 87 | 10.1 | Install flashing at parapet walls | manual | 4d | 2017-08-20 | 2017-08-23 | 82 |  |  |
| 88 | 10.2 | Pour lightweight concrete roof fill |  | 2d | 2020-08-20 | 2020-08-21 | 11, 82, 87 | 77d | 0d |
| 89 | 10.3 | Install seamless roofing material |  | 5d | 2020-08-31 | 2020-09-04 | 88FS+5d | 77d | 0d |
| 90 | 10.4 | Spread stone ballast on seamless roof |  | 5d | 2020-09-07 | 2020-09-11 | 89 | 77d | 0d |
| 91 | 10.5 | Set rooftop equipment |  | 2w | 2020-09-14 | 2020-09-25 | 90 | 77d | 26d |
| 92 | 11 | **Window wall and store front closures** |  | 60d | 2020-08-18 | 2020-11-09 |  | 0d |  |
| 93 | 11.1 | Install window wall aluminum and glass |  | 5w | 2020-08-18 | 2020-09-21 | 81 | 0d |  |
| 94 | 11.2 | Install interior stud walls and drywall |  | 5w | 2020-09-22 | 2020-10-26 | 93 | 0d |  |
| 95 | 11.3 | Install interior doors and hardware |  | 2w | 2020-10-27 | 2020-11-09 | 94 | 5d |  |
| 96 | 11.4 | Install store front doors and hardware |  | 3w | 2020-08-18 | 2020-09-07 | 81 | 35d |  |
| 97 | 12 | **Finishing Building Works** |  | 80d | 2020-09-22 | 2021-01-11 |  | 7d |  |
| 98 | 12.1 | Install millwork and wood trim |  | 3w | 2020-10-27 | 2020-11-16 | 96, 94 | 0d |  |
| 99 | 12.2 | Paint walls and woodwork |  | 4w | 2020-11-17 | 2020-12-14 | 98, 95 | 0d |  |
| 100 | 12.3 | Install conduit at ceiling plenum space |  | 3w | 2020-09-22 | 2020-10-12 | 93 | 25d | 0d |
| 101 | 12.4 | Install duct in ceiling plenum space |  | 3w | 2020-10-27 | 2020-11-16 | 94, 100 | 20d | 0d |
| 102 | 12.5 | Install ceiling grid |  | 2w | 2020-11-17 | 2020-11-30 | 94, 101 | 20d | 0d |
| 103 | 12.6 | Install ceiling tile |  | 2w | 2020-12-01 | 2020-12-14 | 102 | 20d |  |
| 104 | 12.7 | Hang wallpaper |  | 2w | 2020-12-01 | 2020-12-14 | 102 | 20d |  |
| 105 | 12.8 | Install building carpet |  | 4w | 2020-12-15 | 2021-01-11 | 99 | 0d |  |
| 106 | 12.9 | Install hardware and accessories |  | 3w | 2020-12-15 | 2021-01-04 | 99 | 5d |  |
| 107 | 12.10 | Complete interior and exterior sod and plantings |  | 2w | 2020-12-15 | 2020-12-28 | 99 | 7d | 0d |
| 108 | 12.11 | Pave, curb, and stripe parking lot |  | 2w | 2020-12-29 | 2021-01-11 | 107 | 7d |  |

| ID | WBS | Task | Duration | Start | Finish | Predecessors | Total slack | Free slack |
| --- | --- | --- | --- | --- | --- | --- | --- | --- |
| 109 | 13 | **Setting and Testing Elevators** | 40d | 2020-04-21 | 2020-06-15 |  | 154d |  |
| 110 | 13.1 | Set elevator equipment in shafts | 4w | 2020-04-21 | 2020-05-18 | 80, 45, 12 | 154d | 0d |
| 111 | 13.2 | Set equipment in mechanical room | 2w | 2020-05-19 | 2020-06-01 | 110 | 154d | 0d |
| 112 | 13.3 | Test and align doors and equipment | 2w | 2020-06-02 | 2020-06-15 | 111 | 154d |  |
| 113 | 14 | **Plumbing** | 90d | 2020-08-25 | 2020-12-28 |  | 10d |  |
| 114 | 14.1 | Rough-in plumbing in drywall walls | 4w | 2020-09-22 | 2020-10-19 | 93 | 35d | 0d |
| 115 | 14.2 | Tie-in fire line riser and set valves | 2w | 2020-08-25 | 2020-09-07 | 84 | 80d | 70d |
| 116 | 14.3 | Set plumbing fixtures and trim | 3w | 2020-10-20 | 2020-11-09 | 85, 114, 79 | 35d | 25d |
| 117 | 14.4 | Flush, test, and clean piping and fixtures | 2w | 2020-12-15 | 2020-12-28 | 99, 115, 116 | 10d |  |
| 118 | 15 | **Electrical Works** | 139d | 2020-06-03 | 2020-12-14 |  | 23d |  |
| 119 | 15.1 | Rough-in electrical in masonry walls | 4w | 2020-06-03 | 2020-06-30 | 75, 14 | 99d | 74d |
| 120 | 15.2 | Rough-in electrical in drywall walls | 4w | 2020-09-22 | 2020-10-19 | 93 | 35d | 10d |
| 121 | 15.3 | Pull wire in conduit and set area transformers | 3w | 2020-10-13 | 2020-11-02 | 119, 100 | 25d | 0d |
| 122 | 15.4 | Install and terminate electrical devices | 3w | 2020-11-03 | 2020-11-23 | 121, 120 | 25d | 5d |
| 123 | 15.5 | Make electrical terminations for HVAC equipment | 2d | 2020-11-03 | 2020-11-04 | 121, 91 | 51d | 18d |
| 124 | 15.6 | Install light fixtures - test and clean | 2w | 2020-12-01 | 2020-12-14 | 102, 122 | 20d |  |
| 125 | 16 | **Heating and Ventilating - AC** | 180d | 2020-04-21 | 2020-12-28 |  | 33d |  |
| 126 | 16.1 | Set equipment in mechanical room | 2w | 2020-04-21 | 2020-05-04 | 80, 15 | 168d | 100d |
| 127 | 16.2 | Rough-in mechanical in masonry walls | 4w | 2020-06-03 | 2020-06-30 | 75 | 127d | 59d |
| 128 | 16.3 | Rough-in mechanical in drywall walls | 2w | 2020-09-22 | 2020-10-05 | 93 | 93d |  |
| 129 | 16.4 | Install duct in building chase | 3w | 2020-09-22 | 2020-10-12 | 126, 127, 93 | 68d | 35d |
| 130 | 16.5 | Set HVAC trim and test and balance system | 4w | 2020-12-01 | 2020-12-28 | 102, 129, 123 | 33d |  |
| 131 | 17 | **Final Clean-up and Occupancy** | 60d | 2020-10-27 | 2021-01-18 |  | 18d |  |
| 132 | 17.1 | Install hard tile flooring in common areas | 1w | 2020-10-27 | 2020-11-02 | 94 | 46d | 0d |
| 133 | 17.2 | Clean hard tile floors | 4d | 2020-11-03 | 2020-11-06 | 132 | 46d |  |
| 134 | 17.3 | Remove debris from building and do final clean-up | 4d | 2021-01-12 | 2021-01-15 | 105, 104, 106, 107, 117, 124, 103, 133 | 0d |  |
| 135 | 17.4 | Substantial completion date | 1d | 2021-01-18 | 2021-01-18 | 134 | 18d |  |

| ID | WBS | Task | Duration | Start | Finish | Predecessors | Total slack |
| --- | --- | --- | --- | --- | --- | --- | --- |
| 136 | 18 | **Complete Final Inspections** | 6d | 2021-01-18 | 2021-01-25 |  | 0d |
| 137 | 18.1 | Complete elevator inspection and certification | 3d | 2021-01-18 | 2021-01-20 | 134, 112 | 0d |
| 138 | 18.2 | Perform architect's inspection | 1d | 2021-01-21 | 2021-01-21 | 134, 108, 137 | 0d |
| 139 | 18.3 | Perform local building agency inspection | 1d | 2021-01-22 | 2021-01-22 | 138 | 0d |
| 140 | 18.4 | Perform Fire Marshal's inspection | 1d | 2021-01-25 | 2021-01-25 | 139 | 0d |
| 141 | 19 | **Project Closure** | 13d | 2021-01-26 | 2021-02-11 |  | 0d |
| 142 | 19.1 | Complete punch list items from all inspections | 2w | 2021-01-26 | 2021-02-08 | 140 | 0d |
| 143 | 19.2 | Obtain certificate of occupancy | 2d | 2021-02-09 | 2021-02-10 | 142 | 0d |
| 144 | 19.3 | Issue final completion documents including warranties | 1d | 2021-02-09 | 2021-02-09 | 142 | 1d |
| 145 | 19.4 | Issue final request for payment | 1d | 2021-02-11 | 2021-02-11 | 143, 144 | 0d |
